# Underground CBRN-Hardened Blast-Resistant Protective Structure and Sentry Post — Master Construction Programme — Complete Project (Rev WM1)

Schedule from MS Project XML, 2026-11-02 to 2027-11-20.
Works Management — complete project including the sentry post
B.E. Civil Engineering final-semester project

## Calendars

- Site 6-day week (Mon-Sat): Mon-Sat 08:00-12:00, 13:00-17:00; Sun off. Exceptions (off unless hours are given): 2026-12-25 (Christmas Day), 2027-01-26 (Republic Day), 2027-05-01 (Maharashtra Day / Labour Day), 2027-08-15 (Independence Day), 2027-10-02 (Gandhi Jayanti).

## Resources

| Resource | Group | Notes |
| --- | --- | --- |
| Project Manager | Staff | 1 No.. Overall responsibility; MES/Service liaison; procurement of protective items |
| Planning Engineer | Staff | 1 No.. Programme, progress measurement, look-ahead, as-built records |
| Site Engineer (Civil) | Staff | 2 No.. Excavation, RC works, backfill, sentry post |
| Site Engineer (Services) | Staff | 1 No.. HVAC, CBRN, drainage, electrical coordination |
| Surveyor | Staff | 1 No. + chainman. Setting out to the master A.4.1 grid; level control; as-built survey |
| QA/QC Engineer | Staff | 1 No.. Inspection and test plan, hold points, records |
| Safety Officer | Staff | 1 No.. Deep excavation, confined space, work at height, lifting |
| Storekeeper | Staff | 1 No.. Material receipt, stacking to IS 4082, issue |
| Structural Consultant | Staff | visiting. Attends the reinforcement hold points — carried from the R0 schedule |
| Bar bender gang | Labour | 1 gang = 1 fitter + 3 helpers. Peak on the pressure slab: 20.5 t of T25 at 150 both faces both ways |
| Carpenter gang | Labour | 1 gang = 1 carpenter + 2 helpers. Peak on the pressure slab falsework, 104 m2 of deck at 3.200 m |
| Concrete gang | Labour | 1 gang = 1 mason + 6 helpers. Continuous pours: mat 85 m3, pressure slab 112 m3 |
| Mason gang | Labour | 1 gang = 1 mason + 2 helpers. SENTRY POST BRICK MASONRY; screeds; floor finishes; chambers |
| Plasterer gang | Labour | 1 gang = 1 plasterer + 1 helper. Sentry post internal and external plaster |
| Painter gang | Labour | 1 gang = 1 painter + 1 helper. Sealed washable coatings internally; sentry post painting |
| Waterproofing gang | Labour | specialist, 1 gang = 4 No.. Tanking is a specialist trade — 532 m2 of continuous membrane |
| Electrician gang | Labour | 1 gang = 1 electrician + 1 helper. Conduits, cabling, earthing, EMP bonding |
| Plumber gang | Labour | 1 gang = 1 plumber + 1 helper. Drainage, sumps, rising mains |
| HVAC fitter | Labour | 1 gang = 1 fitter + 1 helper. Ductwork, blast valves, CBRN plant |
| Unskilled gang | Labour | general labour. Curing, handling, backfill, cleaning |
| Specialist subcontractor | Labour | as required. EMP enclosure, blast doors, CBRN commissioning, gas-tightness test |
| Excavator | Plant | 0.9 m3 tracked. Bulk excavation, backfill, cover |
| Rock breaker | Plant | hydraulic, excavator mounted. 994 m3 of basalt; NO BLASTING permitted near the sentry post |
| Tipper | Plant | 10 t. Spoil haulage; peak during rock excavation |
| Dozer/grader | Plant | 1 No.. Berm, regrading, access |
| Vibratory roller | Plant | 1 No.. Backfill and cover compaction to 95 % MDD |
| Plate compactor | Plant | 2 No.. Confined backfill in 250 layers |
| Concrete pump | Plant | boom pump. 112 m3 continuous pour to the pressure slab |
| Transit mixer | Plant | 6 m3. Peak on the pressure slab pour |
| Crane | Plant | 20 t mobile. Blast doors, filter trains, EMP enclosure, spiral stair |
| Dewatering pumps | Plant | duty + standby. Continuous through the substructure; GWT (-)2.000 is ASSUMED |
| Scaffolding | Plant | tube and fitting. Slab falsework, masonry, plaster; IS 3696 / IS 4014 |
| Welding set | Plant | 2 No.. EMP straps and blast door frames welded to the reinforcement cage |

## Schedule

| ID | WBS | Task | Type | Duration | Start | Finish | Predecessors | Total slack | Free slack | Resources |
| --- | --- | --- | --- | --- | --- | --- | --- | --- | --- | --- |
| 1 | 1 | **PRE-CONSTRUCTION AND ENABLING WORKS** |  | 155d | 2026-11-02 | 2027-05-04 |  |  |  |  |
| 2 | 1.1 | **Approvals, contract and site possession** |  | 15d | 2026-11-02 | 2026-11-18 |  |  |  |  |
| 3 | 1.1.A1010 | A1010 Contract award, signature and site possession |  | 5d | 2026-11-02 | 2026-11-06 |  | 0d |  | Project Manager |
| 4 | 1.1.A1015 | A1015 Statutory and Service approvals; security clearance of the workforce |  | 10d | 2026-11-02 | 2026-11-12 | 3SS | 19d | 11d | Project Manager |
| 5 | 1.1.A1020 | A1020 Contractor's programme, method statements and quality plan — approval |  | 10d | 2026-11-07 | 2026-11-18 | 3 | 19d | 0d | Project Manager; Planning Engineer |
| 6 | 1.1.A1025 | A1025 MILESTONE: Site possession and commencement | milestone | 0d | 2026-11-07 | 2026-11-07 | 3 | 0d |  |  |
| 7 | 1.2 | **Mobilisation and site establishment** |  | 17d | 2026-11-07 | 2026-11-26 |  |  |  |  |
| 8 | 1.2.A1030 | A1030 Site office, stores, labour accommodation and first-aid post |  | 8d | 2026-11-07 | 2026-11-16 | 6 | 8d | 0d | Site Engineer (Civil); Unskilled gang |
| 9 | 1.2.A1035 | A1035 Site boundary, security fencing, gate and access control |  | 6d | 2026-11-07 | 2026-11-13 | 6 | 13d | 0d | Unskilled gang |
| 10 | 1.2.A1040 | A1040 Temporary water supply, storage and distribution |  | 5d | 2026-11-10 | 2026-11-14 | 8SS+2d | 17d | 9d | Plumber gang |
| 11 | 1.2.A1045 | A1045 Temporary power supply and site distribution board |  | 5d | 2026-11-10 | 2026-11-14 | 8SS+2d | 17d | 9d | Electrician gang |
| 12 | 1.2.A1050 | A1050 Concrete supply arrangements and site testing laboratory |  | 8d | 2026-11-17 | 2026-11-25 | 8 | 8d | 0d | Site Engineer (Civil); QA/QC Engineer |
| 13 | 1.2.A1055 | A1055 Material stacking areas, reinforcement yard and bar-bending area |  | 5d | 2026-11-17 | 2026-11-21 | 8 | 11d | 3d | Unskilled gang; Bar bender gang |
| 14 | 1.2.A1060 | A1060 Plant mobilisation — excavator, breakers, crane, pumps, compactors |  | 5d | 2026-11-14 | 2026-11-19 | 9 | 13d | 5d | Site Engineer (Civil) |
| 15 | 1.2.A1065 | A1065 MILESTONE: Mobilisation complete | milestone | 0d | 2026-11-26 | 2026-11-26 | 8, 9, 10, 11, 12, 13, 14 | 8d | 0d |  |
| 16 | 1.3 | **Survey, setting out and design-parameter confirmation** |  | 29d | 2026-11-07 | 2026-12-10 |  |  |  |  |
| 17 | 1.3.A1070 | A1070 Topographic survey, benchmarks and establishment of the site grid |  | 4d | 2026-11-07 | 2026-11-11 | 6 | 0d |  | Surveyor |
| 18 | 1.3.A1075 | A1075 Confirmatory site investigation — boreholes, rockhead, red-bole seams |  | 12d | 2026-11-12 | 2026-11-25 | 17 | 0d |  | Site Engineer (Civil) |
| 19 | 1.3.A1080 | A1080 Monsoon groundwater monitoring — confirm the design GWT (-)2.000 |  | 20d | 2026-11-12 | 2026-12-04 | 18SS | 0d |  | Site Engineer (Civil) |
| 20 | 1.3.A1085 | A1085 Percolation test for the soak pits — IS 2470 (Part 2) Cl. 4 |  | 5d | 2026-11-26 | 2026-12-01 | 18 | 3d |  | Site Engineer (Civil) |
| 21 | 1.3.A1090 | A1090 Issue confirmed geotechnical parameters to the designer |  | 5d | 2026-12-05 | 2026-12-10 | 18, 19, 20 | 0d |  | Project Manager |
| 22 | 1.3.A1095 | A1095 Setting out — shelter box, headhouse and covered stairwell |  | 3d | 2026-11-12 | 2026-11-14 | 17 | 13d | 0d | Surveyor |
| 23 | 1.3.A1100 | A1100 Setting out — sentry post, not less than 10 m clear of the excavation |  | 2d | 2026-11-16 | 2026-11-17 | 22 | 13d | 0d | Surveyor |
| 24 | 1.3.A1105 | A1105 Setting-out check and independent verification |  | 2d | 2026-11-18 | 2026-11-19 | 22, 23 | 13d | 5d | Surveyor; QA/QC Engineer |

Notes:
- 6: M-01
- 9: military site — access control is not optional
- 10: curing demand governs, not domestic demand
- 13: stacking to IS 4082
- 15: M-02
- 17: origin and axes to master A.4.1
- 18: rockhead (-)1.500/(-)2.000 is ASSUMED in the master
- 19: the single most important assumption in the project
- 20: MANDATORY; likely to fail on basalt
- 21: closes master K.2 assumptions
- 23: master A.2 siting rule

| ID | WBS | Task | Type | Duration | Start | Finish | Predecessors | Total slack | Free slack | Resources |
| --- | --- | --- | --- | --- | --- | --- | --- | --- | --- | --- |
| 25 | 1.4 | **Long-lead procurement — protective and specialist items** |  | 140d | 2026-11-19 | 2027-05-04 |  |  |  |  |
| 26 | 1.4.A1110 | A1110 Blast doors 1 and 2 — specification, enquiry and technical evaluation |  | 15d | 2026-11-19 | 2026-12-05 | 5 | 19d | 0d | Project Manager |
| 27 | 1.4.A1115 | A1115 Blast doors — order placement |  | 5d | 2026-12-07 | 2026-12-11 | 26 | 19d | 0d | Project Manager |
| 28 | 1.4.A1120 | A1120 Blast door cast-in FRAMES — manufacture and delivery |  | 75d | 2026-12-12 | 2027-03-11 | 27 | 19d | 17d |  |
| 29 | 1.4.A1122 | A1122 Blast door LEAVES — manufacture, factory proof test and shipment |  | 120d | 2026-12-12 | 2027-05-04 | 27 | 116d | 65d |  |
| 30 | 1.4.A1130 | A1130 CBRN filter trains AHU-1/AHU-2 — enquiry and order |  | 20d | 2026-11-19 | 2026-12-11 | 5 | 115d | 0d | Project Manager |
| 31 | 1.4.A1135 | A1135 CBRN filter trains — manufacture and delivery |  | 100d | 2026-12-12 | 2027-04-09 | 30 | 115d | 98d |  |
| 32 | 1.4.A1140 | A1140 Blast valves, 5 No. — enquiry and order |  | 20d | 2026-11-19 | 2026-12-11 | 5 | 131d | 0d | Project Manager |
| 33 | 1.4.A1145 | A1145 Blast valves and sleeves — manufacture and delivery |  | 100d | 2026-12-12 | 2027-04-09 | 32 | 131d | 57d |  |
| 34 | 1.4.A1150 | A1150 EMP Zone 2 shielded enclosure — specialist enquiry and order |  | 25d | 2026-11-19 | 2026-12-17 | 5 | 148d | 0d | Project Manager |
| 35 | 1.4.A1155 | A1155 EMP Zone 2 enclosure — manufacture and delivery |  | 80d | 2026-12-18 | 2027-03-23 | 34 | 148d | 103d |  |
| 36 | 1.4.A1160 | A1160 Generator 15 kVA — enquiry, order and delivery |  | 60d | 2026-11-19 | 2027-01-29 | 5 | 195d | 20d | Project Manager |
| 37 | 1.4.A1165 | A1165 Armoured vision panels, 8 No. — enquiry, order and delivery |  | 80d | 2026-11-19 | 2027-02-22 | 5 | 173d | 0d | Project Manager |
| 38 | 1.4.A1170 | A1170 Submersible pumps and drainage plant — order and delivery |  | 45d | 2026-11-19 | 2027-01-11 | 5 | 214d | 172d | Project Manager |
| 39 | 1.4.A1172 | A1172 Reinforcement Fe500D — order, mill certificates and delivery |  | 30d | 2026-11-19 | 2026-12-23 | 5 | 47d |  | Project Manager |
| 40 | 1.4.A1174 | A1174 Waterproofing system — approval of the proprietary system and order |  | 30d | 2026-11-19 | 2026-12-23 | 5 | 39d |  | Project Manager |
| 41 | 1.4.A1176 | A1176 Modular bricks to IS 1077 — source approval, testing and order |  | 20d | 2026-11-19 | 2026-12-11 | 5 | 198d | 60d | Project Manager |
| 42 | 1.4.A1175 | A1175 MILESTONE: All long-lead protective items ordered | milestone | 0d | 2027-02-23 | 2027-02-23 | 27, 30, 32, 34, 36, 37, 39, 40, 41 | 230d |  |  |
| 43 | 2 | **SITE PREPARATION AND EARTHWORKS** |  | 140d | 2026-11-26 | 2027-05-11 |  |  |  |  |
| 44 | 2.1 | **Site clearance and stripping** |  | 11d | 2026-11-26 | 2026-12-08 |  |  |  |  |
| 45 | 2.1.A2010 | A2010 Site clearance, grubbing and removal of plants and shrubs |  | 4d | 2026-11-26 | 2026-11-30 | 15, 24, 4 | 8d | 0d | Excavator; Unskilled gang |
| 46 | 2.1.A2015 | A2015 Strip topsoil 150 and stockpile for the concealment layer |  | 3d | 2026-12-01 | 2026-12-03 | 45 | 8d | 0d | Excavator; Tipper |
| 47 | 2.1.A2020 | A2020 Site levelling, temporary haul road and hardstanding |  | 4d | 2026-12-04 | 2026-12-08 | 46 | 8d | 0d | Excavator; Dozer/grader; Vibratory roller |
| 48 | 2.2 | **Temporary works and excavation protection** |  | 17d | 2026-12-09 | 2026-12-29 |  |  |  |  |
| 49 | 2.2.A2025 | A2025 Design and approval of excavation support and slope treatment |  | 10d | 2026-12-11 | 2026-12-22 | 21 | 0d |  | Site Engineer (Civil) |
| 50 | 2.2.A2030 | A2030 Surface water cut-off drains and interceptor around the excavation |  | 4d | 2026-12-09 | 2026-12-12 | 47 | 8d |  | Unskilled gang |
| 51 | 2.2.A2035 | A2035 Excavation edge protection, barriers, signage and access ladders |  | 3d | 2026-12-26 | 2026-12-29 | 53SS+2d | 30d |  | Unskilled gang; Safety Officer |

Notes:
- 26: 1200 x 2100, 7 bar, gas-tight, rebound rated
- 28: frames ship ahead of the leaves so they can be cast in
- 29: vendor item; master F.1 records it as NOT AVAILABLE
- 30: duty 250 vs 300 m3/h is conflict C21, UNRESOLVED
- 31: EN 1822 H14 HEPA + ASZM-TEDA carbon
- 32: sizes not in master Part B — NOT AVAILABLE
- 34: MIL-STD-188-125-1; 80 dB, 10 kHz–1 GHz
- 37: sentry post first storey; specification is [N]
- 39: 77.3 t including 5 % wastage
- 40: FN1 leaves the product deliberately open
- 41: SENTRY POST BRICK MASONRY — design change SP-B1
- 42: M-03
- 46: 93 m3 retained — do not cart away
- 49: soil zone above rockhead only
- 50: keeps run-off out of a 6.8 m deep cut
- 51: IS 3764

| ID | WBS | Task | Type | Duration | Start | Finish | Predecessors | Total slack | Free slack | Resources |
| --- | --- | --- | --- | --- | --- | --- | --- | --- | --- | --- |
| 52 | 2.3 | **Bulk excavation — main shelter** |  | 27d | 2026-12-23 | 2027-01-23 |  |  |  |  |
| 53 | 2.3.A2040 | A2040 Excavation in soil and weathered overburden to rockhead |  | 4d | 2026-12-23 | 2026-12-28 | 50, 49 | 0d |  | Excavator; Tipper |
| 54 | 2.3.A2045 | A2045 Rock excavation by hydraulic breaker, (-)1.750 to (-)4.000 |  | 9d | 2026-12-29 | 2027-01-07 | 53 | 0d |  | Excavator; Rock breaker; Tipper |
| 55 | 2.3.A2050 | A2050 Rock excavation by hydraulic breaker, (-)4.000 to (-)6.800 |  | 11d | 2027-01-08 | 2027-01-20 | 54 | 0d |  | Excavator; Rock breaker; Tipper |
| 56 | 2.3.A2055 | A2055 Excavation for the covered entry stairwell approach |  | 5d | 2027-01-14 | 2027-01-19 | 55SS+5d | 160d | 134d | Excavator; Tipper |
| 57 | 2.3.A2060 | A2060 Excavation in rock for the sump pit, to (-)8.100 |  | 3d | 2027-01-21 | 2027-01-23 | 55 | 0d |  | Excavator; Rock breaker |
| 58 | 2.4 | **Dewatering** |  | 113d | 2026-12-29 | 2027-05-11 |  |  |  |  |
| 59 | 2.4.A2065 | A2065 Install and commission the construction dewatering system |  | 3d | 2026-12-29 | 2026-12-31 | 53 | 73d | 0d | Dewatering pumps; Plumber gang |
| 60 | 2.4.A2070 | A2070 Dewatering — continuous through the substructure works |  | 110d | 2027-01-01 | 2027-05-11 | 59 | 73d | 69d | Dewatering pumps |
| 61 | 2.5 | **Formation preparation and approval** |  | 11d | 2027-01-25 | 2027-02-06 |  |  |  |  |
| 62 | 2.5.A2075 | A2075 Trim, dress and clean the formation; remove loose rock |  | 4d | 2027-01-25 | 2027-01-29 | 55, 57 | 0d |  | Unskilled gang; Excavator |
| 63 | 2.5.A2080 | A2080 Inspect for red-bole and vesicular seams; over-excavate and replace with M15 |  | 4d | 2027-01-30 | 2027-02-03 | 62 | 0d |  | Site Engineer (Civil); Concrete gang |
| 64 | 2.5.A2085 | A2085 HOLD POINT: formation inspection and approval by the Engineer |  | 2d | 2027-02-04 | 2027-02-05 | 63, 51 | 0d |  | QA/QC Engineer |
| 65 | 2.5.A2090 | A2090 MILESTONE: excavation complete, formation approved | milestone | 0d | 2027-02-06 | 2027-02-06 | 64 | 0d |  |  |
| 66 | 3 | **MAIN UNDERGROUND SHELTER — SUBSTRUCTURE** |  | 92d | 2027-02-06 | 2027-05-25 |  |  |  |  |
| 67 | 3.1 | **Blinding and external tanking, horizontal** |  | 11d | 2027-02-06 | 2027-02-18 |  |  |  |  |
| 68 | 3.1.A3010 | A3010 Blinding PCC M15 100 thk under the mat |  | 3d | 2027-02-06 | 2027-02-09 | 65 | 0d |  | Concrete gang |
| 69 | 3.1.A3015 | A3015 Blinding PCC M15 to the sump pit |  | 1d | 2027-02-06 | 2027-02-06 | 65 | 2d |  | Concrete gang |
| 70 | 3.1.A3020 | A3020 External tanking WP-01 — horizontal, on the blinding |  | 5d | 2027-02-10 | 2027-02-15 | 68, 69, 40 | 0d |  | Waterproofing gang |
| 71 | 3.1.A3025 | A3025 Protection layer to the horizontal tanking |  | 2d | 2027-02-16 | 2027-02-17 | 70 | 0d |  | Waterproofing gang |
| 72 | 3.1.A3030 | A3030 HOLD POINT: tanking integrity inspection before covering |  | 1d | 2027-02-18 | 2027-02-18 | 71 | 0d |  | QA/QC Engineer |
| 73 | 3.2 | **Mat foundation and sump pit** |  | 34d | 2027-02-19 | 2027-03-30 |  |  |  |  |
| 74 | 3.2.A3035 | A3035 Sump pit SU-01 — formwork and reinforcement below the mat |  | 4d | 2027-02-19 | 2027-02-23 | 72 | 13d |  | Bar bender gang; Carpenter gang |
| 75 | 3.2.A3040 | A3040 Mat reinforcement — bottom curtain T16 @ 150 each way |  | 4d | 2027-02-19 | 2027-02-23 | 72, 39 | 0d |  | Bar bender gang |
| 76 | 3.2.A3045 | A3045 Wall starter bars, 900 leg into the mat; kickers set out |  | 3d | 2027-02-24 | 2027-02-26 | 75 | 0d |  | Bar bender gang; Surveyor |
| 77 | 3.2.A3050 | A3050 Mat links T12 @ 250 x 250 grid, chairs and spacers |  | 3d | 2027-02-27 | 2027-03-02 | 76 | 0d |  | Bar bender gang |
| 78 | 3.2.A3055 | A3055 Mat reinforcement — top curtain T16 @ 150 each way |  | 4d | 2027-03-03 | 2027-03-06 | 77 | 0d |  | Bar bender gang |
| 79 | 3.2.A3060 | A3060 Mat edge formwork and U-bars; waterstops at the kicker |  | 3d | 2027-03-08 | 2027-03-10 | 78 | 0d |  | Carpenter gang; Bar bender gang |
| 80 | 3.2.A3065 | A3065 Cast-in items — drainage BW-01, sleeves, earth pits, EMP straps |  | 3d | 2027-03-08 | 2027-03-10 | 78 | 0d |  | Plumber gang; Electrician gang |
| 81 | 3.2.A3070 | A3070 HOLD POINT: mat reinforcement, cover and cast-in inspection |  | 1d | 2027-03-11 | 2027-03-11 | 79, 80, 74 | 0d |  | QA/QC Engineer; Structural Consultant |
| 82 | 3.2.A3075 | A3075 Concrete mat 600 M35 and sump pit — single continuous pour |  | 2d | 2027-03-12 | 2027-03-13 | 81 | 0d |  | Concrete gang; Concrete pump; Transit mixer |
| 83 | 3.2.A3080 | A3080 Curing of the mat — 14 days continuous |  | 14d | 2027-03-15 | 2027-03-30 | 82 | 1d |  | Unskilled gang |
| 84 | 3.2.A3085 | A3085 MILESTONE: mat foundation cast | milestone | 0d | 2027-03-15 | 2027-03-15 | 82 | 213d |  |  |

Notes:
- 53: 344 m3 at mean rockhead (-)1.750
- 54: NO BLASTING — sentry post and existing works within influence
- 55: 994 m3 total rock at 60 m3/day
- 60: level-of-effort activity; large float is correct, it is not a real slack
- 63: master A.6 — a single red-bole seam sizes the mat
- 64: H-01
- 65: M-04
- 68: 14.2 m3
- 70: the tank must be continuous
- 72: H-02
- 75: 14.67 t in the mat group
- 76: lap 800 = 50 phi above a 150 kicker
- 81: H-03
- 82: 81.8 + 3.7 m3
- 83: IS 456 Cl. 13.5; mass section
- 84: M-05

| ID | WBS | Task | Type | Duration | Start | Finish | Predecessors | Total slack | Free slack | Resources |
| --- | --- | --- | --- | --- | --- | --- | --- | --- | --- | --- |
| 85 | 3.3 | **Perimeter walls W1–W4 and protective walls W5, W6, W7** |  | 41d | 2027-03-18 | 2027-05-05 |  |  |  |  |
| 86 | 3.3.A3090 | A3090 Wall reinforcement W1–W4 — both curtains T16 @ 150 each face, each way |  | 12d | 2027-03-18 | 2027-03-31 | 82FS+3d | 0d |  | Bar bender gang |
| 87 | 3.3.A3095 | A3095 Wall reinforcement W5, W6, W7 incl. blast door jambs and header |  | 6d | 2027-03-25 | 2027-03-31 | 86SS+6d | 0d |  | Bar bender gang |
| 88 | 3.3.A3100 | A3100 Haunch reinforcement 500 x 500, diagonal T20 @ 150, wall/mat junction |  | 3d | 2027-03-20 | 2027-03-23 | 86SS+2d | 7d |  | Bar bender gang |
| 89 | 3.3.A3105 | A3105 Set and align the BLAST DOOR FRAMES in W6 and W7; weld to the cage |  | 4d | 2027-04-01 | 2027-04-05 | 87, 28 | 2d |  | Welding set; Site Engineer (Civil) |
| 90 | 3.3.A3110 | A3110 Concealed conduits, sleeves and penetrations cast into the walls |  | 5d | 2027-04-01 | 2027-04-06 | 87 | 1d |  | Electrician gang; Plumber gang |
| 91 | 3.3.A3115 | A3115 Wall formwork — lift 1, (-)6.100 to (-)4.500 |  | 6d | 2027-04-01 | 2027-04-07 | 87, 88, 83 | 0d |  | Carpenter gang |
| 92 | 3.3.A3120 | A3120 HOLD POINT: wall reinforcement, frames and cover inspection — lift 1 |  | 1d | 2027-04-08 | 2027-04-08 | 91, 89, 90, 252 | 0d |  | QA/QC Engineer; Structural Consultant |
| 93 | 3.3.A3125 | A3125 Concrete walls — lift 1, M35 |  | 2d | 2027-04-09 | 2027-04-10 | 92 | 0d |  | Concrete gang; Concrete pump; Transit mixer |
| 94 | 3.3.A3130 | A3130 Curing lift 1; strike vertical formwork after 24 h minimum |  | 7d | 2027-04-12 | 2027-04-19 | 93 | 0d |  | Unskilled gang; Carpenter gang |
| 95 | 3.3.A3135 | A3135 Wall formwork — lift 2, (-)4.500 to (-)2.900 |  | 6d | 2027-04-15 | 2027-04-21 | 94FS-4d | 0d |  | Carpenter gang |
| 96 | 3.3.A3140 | A3140 HOLD POINT: wall reinforcement and cover inspection — lift 2 |  | 1d | 2027-04-22 | 2027-04-22 | 95, 99 | 0d |  | QA/QC Engineer |
| 97 | 3.3.A3145 | A3145 Concrete walls — lift 2, M35 |  | 2d | 2027-04-23 | 2027-04-24 | 96 | 0d |  | Concrete gang; Concrete pump; Transit mixer |
| 98 | 3.3.A3150 | A3150 Curing lift 2 and strike wall formwork |  | 7d | 2027-04-26 | 2027-05-04 | 97 | 0d |  | Unskilled gang; Carpenter gang |
| 99 | 3.3.A3155 | A3155 Construction joint preparation — two waterstops and welded EMP strap |  | 3d | 2027-04-12 | 2027-04-14 | 93 | 6d |  | Waterproofing gang; Welding set |
| 100 | 3.3.A3160 | A3160 MILESTONE: perimeter and protective walls complete | milestone | 0d | 2027-05-05 | 2027-05-05 | 98 | 170d |  |  |
| 101 | 3.4 | **Main staircase — lower flights (FROZEN geometry)** |  | 18d | 2027-05-05 | 2027-05-25 |  |  |  |  |
| 102 | 3.4.A3165 | A3165 Main staircase — formwork to flights 1 and 2 and landings L1, L2 |  | 5d | 2027-05-05 | 2027-05-10 | 98 | 113d | 0d | Carpenter gang |
| 103 | 3.4.A3170 | A3170 Main staircase — reinforcement, flights T12 @ 150, landings T12 @ 125 |  | 4d | 2027-05-11 | 2027-05-14 | 102 | 113d | 0d | Bar bender gang |
| 104 | 3.4.A3175 | A3175 Main staircase — concrete flights 1 and 2 and landings, M35 |  | 2d | 2027-05-15 | 2027-05-17 | 103 | 113d | 0d | Concrete gang |
| 105 | 3.4.A3180 | A3180 Main staircase — curing and strike, lower flights |  | 7d | 2027-05-18 | 2027-05-25 | 104 | 113d | 47d | Unskilled gang; Carpenter gang |
| 106 | 4 | **MAIN UNDERGROUND SHELTER — PRESSURE SLAB** |  | 98d | 2027-05-05 | 2027-08-26 |  |  |  |  |
| 107 | 4.1 | **Falsework and formwork** |  | 12d | 2027-05-05 | 2027-05-18 |  |  |  |  |
| 108 | 4.1.A4010 | A4010 Falsework and soffit deck to the pressure slab, 3.200 m height |  | 8d | 2027-05-05 | 2027-05-13 | 98 | 0d |  | Carpenter gang; Scaffolding |
| 109 | 4.1.A4015 | A4015 Edge formwork, stair void and escape shaft box-outs |  | 4d | 2027-05-14 | 2027-05-18 | 108 | 0d |  | Carpenter gang |

Notes:
- 86: 24.7 t in the wall group; 150 spacing is EMP-driven
- 87: 4-T20 each jamb each face; header 400 x 1100
- 89: EMP continuity — the frame is welded to the cage
- 92: H-04
- 94: IS 456 Table 11
- 96: H-05
- 99: joints at ~6 m; reinforcement fully continuous
- 100: M-06
- 102: FROZEN: 24R @ 170.8333, tread 280, 3 flights x 8
- 105: gives permanent access into the excavation, removing a temporary stair
- 108: 104 m2 of deck; IS 14687

| ID | WBS | Task | Type | Duration | Start | Finish | Predecessors | Total slack | Free slack | Resources |
| --- | --- | --- | --- | --- | --- | --- | --- | --- | --- | --- |
| 110 | 4.2 | **Reinforcement, openings and cast-in items** |  | 30d | 2027-05-19 | 2027-06-22 |  |  |  |  |
| 111 | 4.2.A4020 | A4020 Pressure slab — bottom curtain T25 @ 150 each way |  | 6d | 2027-05-19 | 2027-05-25 | 109 | 0d |  | Bar bender gang |
| 112 | 4.2.A4025 | A4025 Opening trimmers — stair void 6-T25 top and bottom; re-entrant corners 4-T25 at 45 degrees |  | 4d | 2027-05-26 | 2027-05-29 | 111 | 0d |  | Bar bender gang |
| 113 | 4.2.A4030 | A4030 Escape shaft collar trimmers 5-T25 each side/face/direction; hoops and radials |  | 4d | 2027-05-31 | 2027-06-03 | 112 | 0d |  | Bar bender gang |
| 114 | 4.2.A4035 | A4035 Local thickenings 900 to 1200 at the shafts and the void free edge |  | 3d | 2027-06-01 | 2027-06-03 | 113SS+1d | 16d |  | Carpenter gang; Bar bender gang |
| 115 | 4.2.A4040 | A4040 Band beneath headhouse wall HW3 — 4-T25 extra top and bottom in a 1200 band |  | 2d | 2027-05-31 | 2027-06-01 | 112 | 18d |  | Bar bender gang |
| 116 | 4.2.A4045 | A4045 Links T12 4-leg @ 250 in the end 1500; 2-leg @ 300 mid |  | 5d | 2027-06-04 | 2027-06-09 | 113 | 0d |  | Bar bender gang |
| 117 | 4.2.A4050 | A4050 Pressure slab — top curtain T25 @ 150 each way |  | 6d | 2027-06-10 | 2027-06-16 | 116 | 0d |  | Bar bender gang |
| 118 | 4.2.A4055 | A4055 Wall/roof haunches 500 x 500, diagonal T20 @ 150 |  | 3d | 2027-06-12 | 2027-06-15 | 117SS+2d | 6d |  | Bar bender gang |
| 119 | 4.2.A4060 | A4060 Cast-in — blast valve sleeves, duct and pipe penetrations, EMP straps |  | 5d | 2027-06-17 | 2027-06-22 | 117 | 0d |  | Plumber gang; Electrician gang; Welding set |
| 120 | 4.2.A4065 | A4065 Escape shaft collar starter bars |  | 2d | 2027-06-17 | 2027-06-18 | 117 | 3d |  | Bar bender gang |
| 121 | 4.2.A4067 | A4067 Concealed electrical conduits and boxes cast into the slab |  | 4d | 2027-06-07 | 2027-06-10 | 116SS+2d | 10d |  | Electrician gang |
| 122 | 4.3 | **Concrete, curing and striking** |  | 26d | 2027-06-23 | 2027-07-22 |  |  |  |  |
| 123 | 4.3.A4070 | A4070 HOLD POINT: pressure slab pre-pour inspection — reinforcement, cover, cast-ins |  | 2d | 2027-06-23 | 2027-06-24 | 118, 119, 120, 114, 115, 121 | 0d |  | QA/QC Engineer; Structural Consultant |
| 124 | 4.3.A4075 | A4075 Concrete pressure slab 900 M35 — single continuous pour, 112 m3 |  | 2d | 2027-06-25 | 2027-06-26 | 123 | 0d |  | Concrete gang; Concrete pump; Transit mixer |
| 125 | 4.3.A4080 | A4080 Curing of the pressure slab — 14 days continuous |  | 14d | 2027-06-28 | 2027-07-13 | 124 | 0d |  | Unskilled gang |
| 126 | 4.3.A4085 | A4085 MILESTONE: pressure slab cast — the key structural milestone | milestone | 0d | 2027-06-28 | 2027-06-28 | 124 | 26d | 0d |  |
| 127 | 4.3.A4090 | A4090 Strike soffit formwork and props — props to remain 14 days |  | 5d | 2027-07-14 | 2027-07-19 | 125 | 0d |  | Carpenter gang |
| 128 | 4.3.A4095 | A4095 Make good, hack and prepare the soffit |  | 3d | 2027-07-20 | 2027-07-22 | 127 | 0d |  | Unskilled gang |
| 129 | 4.4 | **Main staircase — upper flight and guarding** |  | 33d | 2027-07-20 | 2027-08-26 |  |  |  |  |
| 130 | 4.4.A4110 | A4110 Main staircase — flight 3 to the top of the pressure slab (-)2.000 |  | 6d | 2027-07-20 | 2027-07-26 | 127, 105 | 66d | 23d | Carpenter gang; Bar bender gang; Concrete gang |
| 131 | 4.4.A4115 | A4115 Main staircase — handrails and guarding 1100 high |  | 4d | 2027-08-23 | 2027-08-26 | 130, 303 | 43d |  | Welding set; Unskilled gang |
| 132 | 4.5 | **Internal partitions W8** |  | 6d | 2027-07-20 | 2027-07-26 |  |  |  |  |
| 133 | 4.5.A4100 | A4100 Internal partitions W8, 4 No., 110 thk with A252 mesh both faces |  | 6d | 2027-07-20 | 2027-07-26 | 127 | 7d | 0d | Carpenter gang; Bar bender gang; Concrete gang |

Notes:
- 111: 20.5 t in the roof group; THE governing element
- 112: UFC 3-340-02 §4-27
- 114: 3.3 m3 extra concrete
- 115: HW3 has no wall below it
- 116: IS 4991 Cl. 10.3.1.1 — no dynamic increase on shear
- 123: H-06
- 124: continuous pour preferred inside the protective envelope
- 126: M-07
- 127: IS 456 Table 11: slab spanning over 4.5 m
- 131: NBC 2016 Part 4
- 133: non-structural; 900 door gap at Y 2500–3400

| ID | WBS | Task | Duration | Start | Finish | Predecessors | Total slack | Free slack | Resources |
| --- | --- | --- | --- | --- | --- | --- | --- | --- | --- |
| 134 | 5 | **ENTRY STRUCTURES, ESCAPE SHAFTS AND DOORS** | 69d | 2027-06-28 | 2027-09-15 |  |  |  |  |
| 135 | 5.1 | **Entry headhouse** | 48d | 2027-07-20 | 2027-09-13 |  |  |  |  |
| 136 | 5.1.A5010 | A5010 Headhouse — wall starters, kicker and setting out on the pressure slab | 3d | 2027-07-20 | 2027-07-22 | 127 | 13d | 0d | Bar bender gang; Surveyor |
| 137 | 5.1.A5015 | A5015 Headhouse wall reinforcement HW1–HW4, T16 @ 150 EF EW, T12 4L @ 250 | 6d | 2027-07-23 | 2027-07-29 | 136 | 13d | 0d | Bar bender gang |
| 138 | 5.1.A5020 | A5020 Inner security door frame in HW2 — cast in and welded to the cage | 2d | 2027-07-30 | 2027-07-31 | 137 | 13d | 0d | Welding set |
| 139 | 5.1.A5025 | A5025 Headhouse wall formwork | 5d | 2027-08-02 | 2027-08-06 | 137, 138 | 13d | 0d | Carpenter gang |
| 140 | 5.1.A5030 | A5030 HOLD POINT: headhouse wall inspection | 1d | 2027-08-07 | 2027-08-07 | 139 | 13d | 0d | QA/QC Engineer |
| 141 | 5.1.A5035 | A5035 Concrete headhouse walls 400 M35 | 1d | 2027-08-09 | 2027-08-09 | 140 | 13d | 0d | Concrete gang; Concrete pump |
| 142 | 5.1.A5040 | A5040 Curing and strike — headhouse walls | 5d | 2027-08-10 | 2027-08-14 | 141 | 13d | 0d | Unskilled gang; Carpenter gang |
| 143 | 5.1.A5045 | A5045 Headhouse roof falsework and formwork | 4d | 2027-08-16 | 2027-08-19 | 142 | 13d | 0d | Carpenter gang; Scaffolding |
| 144 | 5.1.A5050 | A5050 Headhouse roof reinforcement T20 @ 150 EF EW; T12 4L @ 175 / 250 | 5d | 2027-08-20 | 2027-08-25 | 143 | 13d | 0d | Bar bender gang |
| 145 | 5.1.A5055 | A5055 HOLD POINT: headhouse roof inspection | 1d | 2027-08-26 | 2027-08-26 | 144 | 13d | 0d | QA/QC Engineer; Structural Consultant |
| 146 | 5.1.A5060 | A5060 Concrete headhouse roof 500 M35 | 1d | 2027-08-27 | 2027-08-27 | 145 | 13d | 0d | Concrete gang; Concrete pump |
| 147 | 5.1.A5065 | A5065 Curing 14 days and strike — headhouse roof | 14d | 2027-08-28 | 2027-09-13 | 146 | 13d | 0d | Unskilled gang; Carpenter gang |
| 148 | 5.2 | **Covered entry stairwell** | 40d | 2027-06-28 | 2027-08-12 |  |  |  |  |
| 149 | 5.2.A5070 | A5070 Compacted fill and blinding to the stepped raft | 4d | 2027-06-28 | 2027-07-01 | 56, 126 | 26d | 0d | Unskilled gang; Plate compactor; Concrete gang |
| 150 | 5.2.A5075 | A5075 Stepped raft 300 — reinforcement and concrete; movement joint at the headhouse | 5d | 2027-07-02 | 2027-07-07 | 149 | 26d | 0d | Bar bender gang; Carpenter gang; Concrete gang |
| 151 | 5.2.A5080 | A5080 Stairwell side walls and headwall — reinforcement and formwork | 6d | 2027-07-08 | 2027-07-14 | 150 | 26d | 0d | Bar bender gang; Carpenter gang |
| 152 | 5.2.A5085 | A5085 Concrete stairwell walls 250 M35 | 1d | 2027-07-15 | 2027-07-15 | 151 | 26d | 0d | Concrete gang; Concrete pump |
| 153 | 5.2.A5090 | A5090 Entry flight 12R @ 166.667/300, waist 250; top landing and platform | 6d | 2027-07-20 | 2027-07-26 | 152FS+3d | 26d | 0d | Carpenter gang; Bar bender gang; Concrete gang |
| 154 | 5.2.A5095 | A5095 Opening-corner U-bars at the head of the flight — bars crossed | 1d | 2027-07-20 | 2027-07-20 | 153SS | 31d | 5d | Bar bender gang |
| 155 | 5.2.A5100 | A5100 Entry door lintel 250 x 350 and headwall opening | 2d | 2027-07-27 | 2027-07-28 | 153 | 66d | 11d | Bar bender gang; Concrete gang |
| 156 | 5.2.A5105 | A5105 Stairwell raking roof 250 — falsework, reinforcement and concrete | 6d | 2027-07-27 | 2027-08-02 | 153, 154 | 26d | 0d | Carpenter gang; Bar bender gang; Concrete gang |
| 157 | 5.2.A5110 | A5110 Curing and strike — covered entry stairwell | 7d | 2027-08-03 | 2027-08-10 | 156 | 26d | 0d | Unskilled gang; Carpenter gang |
| 158 | 5.2.A5115 | A5115 Threshold channel 300 and grating at X 8950–9250 | 2d | 2027-08-11 | 2027-08-12 | 157 | 39d | 0d | Concrete gang; Unskilled gang |

Notes:
- 137: walls designed for 383 kPa either face — C10
- 138: not blast rated, but EMP-continuous
- 140: H-07
- 144: utilisation 90 % — the most highly worked element
- 145: H-08
- 150: the ONLY movement joint — outside the protective envelope
- 154: SP 34 Cl. 5.5

| ID | WBS | Task | Type | Duration | Start | Finish | Predecessors | Total slack | Free slack | Resources |
| --- | --- | --- | --- | --- | --- | --- | --- | --- | --- | --- |
| 159 | 5.3 | **Escape shafts ESC 1 and ESC 2** |  | 14d | 2027-07-20 | 2027-08-04 |  |  |  |  |
| 160 | 5.3.A5120 | A5120 ESC 1 collar 250 RC — reinforcement, formwork and concrete to +0.150 |  | 5d | 2027-07-20 | 2027-07-24 | 127 | 60d | 0d | Bar bender gang; Carpenter gang; Concrete gang |
| 161 | 5.3.A5125 | A5125 ESC 2 collar 250 RC — reinforcement, formwork and concrete to +0.700 |  | 5d | 2027-07-26 | 2027-07-30 | 160 | 60d | 0d | Bar bender gang; Carpenter gang; Concrete gang |
| 162 | 5.3.A5130 | A5130 Escape shaft covers, ladders and closure devices |  | 4d | 2027-07-31 | 2027-08-04 | 161 | 60d | 0d | Welding set; Unskilled gang |
| 163 | 5.4 | **Blast doors, security door and external door** |  | 50d | 2027-07-20 | 2027-09-15 |  |  |  |  |
| 164 | 5.4.A5135 | A5135 Install BLAST DOOR 1 in W6; align and test the seal |  | 4d | 2027-07-20 | 2027-07-23 | 29, 127 | 51d | 0d | Crane; Site Engineer (Civil); Welding set |
| 165 | 5.4.A5140 | A5140 Install BLAST DOOR 2 in W7; align and test the seal |  | 4d | 2027-07-24 | 2027-07-28 | 164 | 51d | 44d | Crane; Site Engineer (Civil); Welding set |
| 166 | 5.4.A5145 | A5145 Inner security door 900 x 2100 in HW2 |  | 2d | 2027-09-14 | 2027-09-15 | 147 | 26d |  | Unskilled gang |
| 167 | 5.4.A5150 | A5150 External entry door 1000 x 2100 in the stairwell headwall |  | 2d | 2027-08-11 | 2027-08-12 | 157, 155 | 55d |  | Unskilled gang |
| 168 | 6 | **WATERPROOFING** |  | 117d | 2027-05-05 | 2027-09-17 |  |  |  |  |
| 169 | 6.1 | **External tanking, vertical** |  | 17d | 2027-05-05 | 2027-05-24 |  |  |  |  |
| 170 | 6.1.A6010 | A6010 Prepare and repair the external wall faces; fillets at the mat junction |  | 4d | 2027-05-05 | 2027-05-08 | 98 | 52d | 0d | Waterproofing gang |
| 171 | 6.1.A6015 | A6015 External tanking WP-01 — vertical to the wall faces, lapped to the horizontal |  | 8d | 2027-05-10 | 2027-05-18 | 170, 40 | 52d | 0d | Waterproofing gang |
| 172 | 6.1.A6020 | A6020 Protection board or screed to the vertical tanking |  | 4d | 2027-05-19 | 2027-05-22 | 171 | 52d | 0d | Waterproofing gang |
| 173 | 6.1.A6025 | A6025 HOLD POINT: vertical tanking inspection before backfilling |  | 1d | 2027-05-24 | 2027-05-24 | 172 | 52d | 48d | QA/QC Engineer |
| 174 | 6.2 | **Roof waterproofing and protection** |  | 11d | 2027-07-23 | 2027-08-04 |  |  |  |  |
| 175 | 6.2.A6030 | A6030 Roof waterproofing WP-01 over the pressure slab; dress into openings |  | 6d | 2027-07-23 | 2027-07-29 | 128 | 0d |  | Waterproofing gang |
| 176 | 6.2.A6035 | A6035 Protection screed 100 over the roof membrane — cover layer 1 |  | 4d | 2027-07-30 | 2027-08-03 | 175 | 0d |  | Concrete gang |
| 177 | 6.2.A6040 | A6040 HOLD POINT: roof membrane integrity test before covering |  | 1d | 2027-08-04 | 2027-08-04 | 176 | 0d |  | QA/QC Engineer |
| 178 | 6.3 | **Above-ground roofs** |  | 38d | 2027-08-05 | 2027-09-17 |  |  |  |  |
| 179 | 6.3.A6045 | A6045 Headhouse and stairwell roof waterproofing WP-06 and protection |  | 4d | 2027-09-14 | 2027-09-17 | 147, 157 | 19d | 0d | Waterproofing gang |
| 180 | 6.3.A6055 | A6055 MILESTONE: buried envelope watertight — tanking complete | milestone | 0d | 2027-08-05 | 2027-08-05 | 173, 177 | 91d |  |  |
| 181 | 7 | **BACKFILL, ENGINEERED COVER AND OVERBURDEN** |  | 198d | 2027-01-21 | 2027-09-10 |  |  |  |  |
| 182 | 7.1 | **Side backfill** |  | 10d | 2027-07-20 | 2027-07-30 |  |  |  |  |
| 183 | 7.1.A7010 | A7010 Side backfill in selected fill — 250 layers compacted to 95 % MDD |  | 10d | 2027-07-20 | 2027-07-30 | 173, 127, 60FF | 4d | 0d | Excavator; Plate compactor; Vibratory roller; Unskilled gang |
| 184 | 7.1.A7015 | A7015 In-situ density testing of the side backfill |  | 3d | 2027-07-23 | 2027-07-26 | 183SS+3d | 8d |  | QA/QC Engineer |

Notes:
- 167: opens outward; 50 weather bar
- 171: 265 m2
- 173: H-09 — the last chance to see it
- 175: 122 m2 net
- 176: 10.3 m3; also the first layer of the cover
- 177: H-10
- 180: M-08
- 183: 290 m3; never backfill against an unpropped wall before the roof is on
- 184: IS 2720 (Part 28)

| ID | WBS | Task | Type | Duration | Start | Finish | Predecessors | Total slack | Free slack | Resources |
| --- | --- | --- | --- | --- | --- | --- | --- | --- | --- | --- |
| 185 | 7.2 | **Engineered cover build-up, 2000 layered** |  | 194d | 2027-01-21 | 2027-09-06 |  |  |  |  |
| 186 | 7.2.A7020 | A7020 Crush excavated basalt on site to 25–75 mm and stockpile |  | 8d | 2027-01-21 | 2027-01-30 | 55 | 163d |  | Excavator; Rock breaker |
| 187 | 7.2.A7025 | A7025 Compacted engineered fill 750 at 95 % MDD over the roof |  | 5d | 2027-08-05 | 2027-08-10 | 177, 183, 184 | 0d |  | Excavator; Plate compactor; Unskilled gang |
| 188 | 7.2.A7030 | A7030 Crushed basalt rubble layer 500 |  | 4d | 2027-08-11 | 2027-08-14 | 187, 186 | 0d |  | Excavator; Unskilled gang |
| 189 | 7.2.A7050 | A7050 Granular filter layer 150 |  | 2d | 2027-08-31 | 2027-09-01 | 194 | 0d |  | Unskilled gang |
| 190 | 7.2.A7055 | A7055 Topsoil 300 and turfing — the concealment layer |  | 4d | 2027-09-02 | 2027-09-06 | 189 | 0d |  | Excavator; Unskilled gang |
| 191 | 7.3 | **Burster slab M30** |  | 13d | 2027-08-16 | 2027-08-30 |  |  |  |  |
| 192 | 7.3.A7035 | A7035 Burster slab M30 200 thk — formwork and reinforcement T12 @ 150 B/W |  | 5d | 2027-08-16 | 2027-08-20 | 188 | 0d |  | Carpenter gang; Bar bender gang |
| 193 | 7.3.A7040 | A7040 Concrete burster slab M30 |  | 1d | 2027-08-21 | 2027-08-21 | 192 | 0d |  | Concrete gang; Concrete pump |
| 194 | 7.3.A7045 | A7045 Curing of the burster slab |  | 7d | 2027-08-23 | 2027-08-30 | 193 | 0d |  | Unskilled gang |
| 195 | 7.4 | **Verification of the cover** |  | 4d | 2027-09-07 | 2027-09-10 |  |  |  |  |
| 196 | 7.4.A7060 | A7060 Compaction test records and verification of the cover build-up |  | 3d | 2027-09-07 | 2027-09-09 | 190 | 0d |  | QA/QC Engineer; Site Engineer (Civil) |
| 197 | 7.4.A7065 | A7065 MILESTONE: overburden complete — the structure is buried | milestone | 0d | 2027-09-10 | 2027-09-10 | 196 | 0d |  |  |
| 198 | 8 | **SENTRY POST** |  | 120d | 2027-01-21 | 2027-06-11 |  |  |  |  |
| 199 | 8.1 | **Setting out, excavation and footings F1** |  | 18d | 2027-01-21 | 2027-02-11 |  |  |  |  |
| 200 | 8.1.A8010 | A8010 Sentry post setting out — grids A–B and 1–2, level control |  | 2d | 2027-01-21 | 2027-01-22 | 24, 15, 55 | 102d | 0d | Surveyor |
| 201 | 8.1.A8015 | A8015 Excavation for footings F1, 4 No., to (-)2.100 |  | 4d | 2027-01-23 | 2027-01-28 | 200 | 102d | 0d | Excavator; Rock breaker |
| 202 | 8.1.A8020 | A8020 HOLD POINT: founding stratum inspection — in-situ basalt at (-)2.000 |  | 1d | 2027-01-29 | 2027-01-29 | 201 | 102d | 0d | QA/QC Engineer; Site Engineer (Civil) |
| 203 | 8.1.A8025 | A8025 Blinding PCC M15 100 under F1, 4 No. |  | 1d | 2027-01-30 | 2027-01-30 | 202 | 102d | 0d | Concrete gang |
| 204 | 8.1.A8030 | A8030 Footing F1 reinforcement T12 @ 150 both ways; column starters 8-T16 |  | 3d | 2027-02-01 | 2027-02-03 | 203 | 102d | 0d | Bar bender gang |
| 205 | 8.1.A8035 | A8035 HOLD POINT: footing reinforcement and starter inspection |  | 1d | 2027-02-04 | 2027-02-04 | 204 | 102d | 0d | QA/QC Engineer |
| 206 | 8.1.A8040 | A8040 Concrete footings F1 M30 |  | 1d | 2027-02-05 | 2027-02-05 | 205 | 102d | 0d | Concrete gang |
| 207 | 8.1.A8045 | A8045 Curing and backfill to the footings |  | 5d | 2027-02-06 | 2027-02-11 | 206 | 102d | 0d | Unskilled gang; Plate compactor |
| 208 | 8.2 | **Frame — columns C1, plinth beam PB** |  | 15d | 2027-02-12 | 2027-03-01 |  |  |  |  |
| 209 | 8.2.A8050 | A8050 Columns C1 to plinth level — reinforcement, formwork, concrete |  | 5d | 2027-02-12 | 2027-02-17 | 207 | 102d | 0d | Bar bender gang; Carpenter gang; Concrete gang |
| 210 | 8.2.A8055 | A8055 Plinth beam PB 250 x 400 at +0.450 — reinforcement, formwork, concrete |  | 4d | 2027-02-18 | 2027-02-22 | 209 | 102d | 0d | Bar bender gang; Carpenter gang; Concrete gang |
| 211 | 8.2.A8060 | A8060 Filling and compaction under the ground floor to +0.450 |  | 3d | 2027-02-23 | 2027-02-25 | 210 | 172d | 62d | Unskilled gang; Plate compactor |
| 212 | 8.2.A8065 | A8065 Columns C1 — ground storey, to the first-floor beam soffit |  | 6d | 2027-02-23 | 2027-03-01 | 210 | 102d | 0d | Bar bender gang; Carpenter gang; Concrete gang |

Notes:
- 186: wins the 51 m3 rubble layer from the cut
- 187: 77 m3 — radiation mass
- 188: scatters burster energy
- 189: stops fines clogging
- 190: uses the stripped topsoil from A2015
- 192: 1.22 t of T12
- 193: 20.6 m3
- 196: must reproduce the 2000 / 40.65 kPa build-up of master A.7.3
- 197: M-09
- 200: 3650 x 4650 c/c; at least 10 m clear
- 201: 37 m3
- 202: H-11
- 205: H-12
- 206: 5.4 m3
- 210: PB carries the ground storey masonry
- 211: 7.5 m3
- 212: T10 confining hoops + cross-ties @ 85 over 500 from every joint face

| ID | WBS | Task | Type | Duration | Start | Finish | Predecessors | Total slack | Free slack | Resources |
| --- | --- | --- | --- | --- | --- | --- | --- | --- | --- | --- |
| 213 | 8.3 | **Frame — first floor beams B1/B2 and slab S1** |  | 18d | 2027-03-02 | 2027-03-22 |  |  |  |  |
| 214 | 8.3.A8070 | A8070 First floor beams B1/B2 and slab S1 150 — falsework and formwork |  | 5d | 2027-03-02 | 2027-03-06 | 212 | 102d | 0d | Carpenter gang; Scaffolding |
| 215 | 8.3.A8075 | A8075 First floor beam and slab reinforcement, incl. corner torsion steel |  | 4d | 2027-03-08 | 2027-03-11 | 214 | 102d | 0d | Bar bender gang |
| 216 | 8.3.A8080 | A8080 HOLD POINT: first floor reinforcement inspection — IS 13920 detailing |  | 1d | 2027-03-12 | 2027-03-12 | 215 | 102d | 0d | QA/QC Engineer; Structural Consultant |
| 217 | 8.3.A8085 | A8085 Concrete first floor beams and slab M30 |  | 1d | 2027-03-13 | 2027-03-13 | 216 | 102d | 0d | Concrete gang |
| 218 | 8.3.A8090 | A8090 Curing 7 days; strike sides, props to remain |  | 7d | 2027-03-15 | 2027-03-22 | 217 | 102d | 0d | Unskilled gang; Carpenter gang |
| 219 | 8.4 | **Frame — roof beams, slab, projection and parapet** |  | 25d | 2027-03-23 | 2027-04-20 |  |  |  |  |
| 220 | 8.4.A8095 | A8095 Columns C1 — first storey, to the roof beam soffit |  | 6d | 2027-03-23 | 2027-03-29 | 218 | 102d | 0d | Bar bender gang; Carpenter gang; Concrete gang |
| 221 | 8.4.A8100 | A8100 Roof beams B1/B2 and slab S1 with the 300 projection — formwork and reinforcement |  | 6d | 2027-03-30 | 2027-04-05 | 220 | 102d | 0d | Carpenter gang; Bar bender gang; Scaffolding |
| 222 | 8.4.A8105 | A8105 HOLD POINT: sentry post roof reinforcement inspection |  | 1d | 2027-04-06 | 2027-04-06 | 221 | 102d | 0d | QA/QC Engineer; Structural Consultant |
| 223 | 8.4.A8110 | A8110 Concrete sentry post roof M30 |  | 1d | 2027-04-07 | 2027-04-07 | 222 | 102d | 0d | Concrete gang |
| 224 | 8.4.A8115 | A8115 Parapet 300 high over the roof projection |  | 3d | 2027-04-12 | 2027-04-14 | 223FS+3d | 186d | 4d | Bar bender gang; Carpenter gang; Concrete gang |
| 225 | 8.4.A8120 | A8120 Curing and strike — sentry post roof |  | 10d | 2027-04-08 | 2027-04-19 | 223 | 102d | 0d | Unskilled gang; Carpenter gang |
| 226 | 8.4.A8125 | A8125 MILESTONE: sentry post frame complete | milestone | 0d | 2027-04-20 | 2027-04-20 | 225, 224 | 182d |  |  |
| 227 | 8.5 | **BRICK MASONRY WALLS (design change SP-B1)** |  | 39d | 2027-03-15 | 2027-04-28 |  |  |  |  |
| 228 | 8.5.A8130 | A8130 Brick delivery, stacking, sampling and testing to IS 3495 |  | 4d | 2027-03-15 | 2027-03-18 | 41, 217 | 121d | 3d | Storekeeper; QA/QC Engineer |
| 229 | 8.5.A8135 | A8135 BRICK MASONRY WALLS — ground storey, 190 thk in CM 1:6 |  | 5d | 2027-03-23 | 2027-03-27 | 218, 228 | 118d | 0d | Mason gang; Unskilled gang; Scaffolding |
| 230 | 8.5.A8145 | A8145 HOLD POINT: masonry line, level, plumb and joint thickness — ground storey |  | 1d | 2027-03-31 | 2027-03-31 | 229, 235 | 118d | 16d | QA/QC Engineer |
| 231 | 8.5.A8150 | A8150 BRICK MASONRY WALLS — first storey, 190 thk in CM 1:6 |  | 4d | 2027-04-20 | 2027-04-23 | 225, 230 | 102d | 0d | Mason gang; Unskilled gang; Scaffolding |
| 232 | 8.5.A8160 | A8160 HOLD POINT: masonry inspection — first storey |  | 1d | 2027-04-27 | 2027-04-27 | 231, 236 | 102d | 0d | QA/QC Engineer |
| 233 | 8.5.A8165 | A8165 MILESTONE: sentry post brick masonry complete | milestone | 0d | 2027-04-28 | 2027-04-28 | 232 | 175d |  |  |
| 234 | 8.6 | **Lintels and openings** |  | 25d | 2027-03-29 | 2027-04-26 |  |  |  |  |
| 235 | 8.6.A8140 | A8140 RC lintels over the D1 and W1 openings — ground storey |  | 2d | 2027-03-29 | 2027-03-30 | 229 | 118d | 0d | Bar bender gang; Carpenter gang; Concrete gang |
| 236 | 8.6.A8155 | A8155 RC lintels over the vision panel and door openings — first storey |  | 2d | 2027-04-24 | 2027-04-26 | 231 | 102d | 0d | Bar bender gang; Carpenter gang; Concrete gang |

Notes:
- 215: T8 @ 200 torsion, four layers, 700 sq at all four corners — IS 456 D-1.8
- 216: H-13
- 218: IS 456 Table 11
- 222: H-14
- 226: M-10
- 228: compressive strength, water absorption, efflorescence, warpage
- 229: DESIGN CHANGE SP-B1: brick masonry replaces the 200 RC ballistic infill
- 230: H-15
- 232: H-16
- 233: M-11
- 235: NEW work created by SP-B1; lintel design does not yet exist

| ID | WBS | Task | Type | Duration | Start | Finish | Predecessors | Total slack | Free slack | Resources |
| --- | --- | --- | --- | --- | --- | --- | --- | --- | --- | --- |
| 237 | 8.7 | **Spiral stair** |  | 6d | 2027-04-20 | 2027-04-26 |  |  |  |  |
| 238 | 8.7.A8170 | A8170 External spiral stair 1000 R, 250 dia central pole — fabrication and erection |  | 6d | 2027-04-20 | 2027-04-26 | 225 | 147d | 38d | Welding set; Crane; Unskilled gang |
| 239 | 8.8 | **Plaster, flooring and finishes** |  | 34d | 2027-05-04 | 2027-06-11 |  |  |  |  |
| 240 | 8.8.A8180 | A8180 Sentry post internal plaster 12 mm, sand faced, CM 1:4 |  | 6d | 2027-05-04 | 2027-05-10 | 248 | 102d | 0d | Plasterer gang; Unskilled gang |
| 241 | 8.8.A8185 | A8185 Sentry post external plaster 15 mm, two coat, with scaffolding |  | 6d | 2027-05-11 | 2027-05-17 | 240 | 102d | 0d | Plasterer gang; Scaffolding |
| 242 | 8.8.A8190 | A8190 Sentry post flooring — ground and first floor |  | 4d | 2027-05-11 | 2027-05-14 | 240, 211 | 110d | 8d | Mason gang |
| 243 | 8.8.A8195 | A8195 Door D1 (2 No.), window W1 and armoured vision panel installation |  | 6d | 2027-05-18 | 2027-05-24 | 241, 37 | 102d | 0d | Unskilled gang; Welding set |
| 244 | 8.8.A8205 | A8205 Sentry post painting — internal and external |  | 6d | 2027-06-01 | 2027-06-07 | 249 | 102d | 0d | Painter gang; Scaffolding |
| 245 | 8.8.A8210 | A8210 Sentry post testing and snagging |  | 3d | 2027-06-08 | 2027-06-10 | 244 | 109d | 0d | QA/QC Engineer; Electrician gang |
| 246 | 8.8.A8215 | A8215 MILESTONE: sentry post complete | milestone | 0d | 2027-06-11 | 2027-06-11 | 245, 238 | 109d |  |  |
| 247 | 8.9 | **Electrical installation** |  | 28d | 2027-04-28 | 2027-05-31 |  |  |  |  |
| 248 | 8.9.A8175 | A8175 Sentry post electrical — conduits and boxes chased into the masonry |  | 4d | 2027-04-28 | 2027-05-03 | 232 | 102d | 0d | Electrician gang |
| 249 | 8.9.A8200 | A8200 Sentry post electrical — wiring, distribution board, fittings, earthing |  | 6d | 2027-05-25 | 2027-05-31 | 242, 243 | 102d | 0d | Electrician gang |
| 250 | 9 | **MECHANICAL, CBRN AND HVAC SERVICES** |  | 136d | 2027-03-20 | 2027-08-26 |  |  |  |  |
| 251 | 9.1 | **Builder's work, sleeves and penetrations** |  | 6d | 2027-03-20 | 2027-03-26 |  |  |  |  |
| 252 | 9.1.A9010 | A9010 Builder's work — sleeves, ducts and penetrations coordinated with the RC |  | 6d | 2027-03-20 | 2027-03-26 | 86SS+2d | 10d |  | HVAC fitter; Site Engineer (Services) |
| 253 | 9.2 | **Shafts, ductwork and blast valves** |  | 46d | 2027-06-17 | 2027-08-09 |  |  |  |  |
| 254 | 9.2.A9015 | A9015 Install blast valve sleeves in the walls and roof |  | 4d | 2027-06-17 | 2027-06-21 | 33, 117 | 74d | 37d | HVAC fitter; Welding set |
| 255 | 9.2.A9020 | A9020 Fresh-air shaft SH-1 600 x 600 and gooseneck head at +1.500 |  | 5d | 2027-07-20 | 2027-07-24 | 127 | 45d | 8d | HVAC fitter; Concrete gang |
| 256 | 9.2.A9025 | A9025 Generator air shaft SH-2 600 x 600 |  | 4d | 2027-07-20 | 2027-07-23 | 127 | 46d | 0d | HVAC fitter; Concrete gang |
| 257 | 9.2.A9030 | A9030 Ductwork installation, bays 1–6 — every run inspectable along its length |  | 10d | 2027-07-23 | 2027-08-03 | 128 | 17d | 0d | HVAC fitter |
| 258 | 9.2.A9035 | A9035 Install blast valves BV-1 to BV-5 |  | 5d | 2027-08-04 | 2027-08-09 | 254, 257, 255 | 37d | 14d | HVAC fitter |
| 259 | 9.3 | **CBRN plant and generator** |  | 29d | 2027-07-24 | 2027-08-26 |  |  |  |  |
| 260 | 9.3.A9040 | A9040 Install CBRN filter trains AHU-1 and AHU-2 in bay 5 |  | 8d | 2027-08-04 | 2027-08-12 | 31, 257 | 17d | 0d | HVAC fitter; Crane |
| 261 | 9.3.A9045 | A9045 Install CO2 scrubber, oxygen store and dehumidifier |  | 5d | 2027-08-13 | 2027-08-18 | 260 | 17d | 0d | HVAC fitter |
| 262 | 9.3.A9050 | A9050 Install generator GEN-1 15 kVA in bay 8 on a bunded plinth |  | 5d | 2027-07-24 | 2027-07-29 | 36, 256 | 46d | 12d | HVAC fitter; Crane; Electrician gang |
| 263 | 9.3.A9055 | A9055 HVAC terminal devices, dampers and controls |  | 6d | 2027-08-19 | 2027-08-25 | 261 | 17d | 0d | HVAC fitter |
| 264 | 9.3.A9060 | A9060 MILESTONE: CBRN plant installed | milestone | 0d | 2027-08-26 | 2027-08-26 | 263, 262, 258 | 23d | 6d |  |

Notes:
- 240: IS 1661
- 242: 33 m2; specification not in the project
- 244: IS 2395 (Part 1)
- 246: M-12
- 248: chases cut, not hammered — masonry rule
- 255: 12.3 m from the intake to the entry
- 257: no suspended ceiling anywhere — FN1 C-01
- 260: true N+1 — either train carries the whole duty
- 261: soda lime, not oxygen, limits closed mode
- 264: M-13

| ID | WBS | Task | Type | Duration | Start | Finish | Predecessors | Total slack | Free slack | Resources |
| --- | --- | --- | --- | --- | --- | --- | --- | --- | --- | --- |
| 265 | 10 | **DRAINAGE AND SANITARY WORKS** |  | 48d | 2027-07-23 | 2027-09-16 |  |  |  |  |
| 266 | 10.1 | **Internal drainage and the clean sump** |  | 18d | 2027-07-23 | 2027-08-12 |  |  |  |  |
| 267 | 10.1.A10010 | A10010 Internal gullies GY-01 to GY-09; floor falls set out |  | 4d | 2027-07-23 | 2027-07-27 | 128 | 12d | 0d | Plumber gang; Surveyor |
| 268 | 10.1.A10015 | A10015 Waste and effluent drains PD-01 and PD-03 — laid and tested |  | 5d | 2027-07-28 | 2027-08-02 | 267 | 12d | 0d | Plumber gang |
| 269 | 10.1.A10020 | A10020 Clean sump SU-01 — fit out, pumps PU-01/PU-02 and hand pump PU-03 |  | 5d | 2027-08-03 | 2027-08-07 | 38, 268 | 42d | 0d | Plumber gang; Electrician gang |
| 270 | 10.1.A10025 | A10025 Rising main PD-05 — isolation valve, gas-tight NRV, blast check valve and deep-seal trap in series |  | 4d | 2027-08-09 | 2027-08-12 | 269 | 42d | 29d | Plumber gang |
| 271 | 10.2 | **Segregated decontamination effluent** |  | 4d | 2027-08-03 | 2027-08-06 |  |  |  |  |
| 272 | 10.2.A10030 | A10030 Decontamination effluent segregation — CP-01 and tank TK-01 in bay 8 |  | 4d | 2027-08-03 | 2027-08-06 | 268 | 47d | 34d | Plumber gang |
| 273 | 10.3 | **Above-ground and external drainage** |  | 41d | 2027-07-31 | 2027-09-16 |  |  |  |  |
| 274 | 10.3.A10035 | A10035 Stairwell sump SU-02 and pumps PU-04/PU-05 |  | 4d | 2027-08-11 | 2027-08-14 | 157, 38 | 40d | 27d | Plumber gang; Electrician gang |
| 275 | 10.3.A10040 | A10040 Headhouse gully GY-11 and trapped connection |  | 2d | 2027-09-14 | 2027-09-15 | 147 | 13d | 0d | Plumber gang |
| 276 | 10.3.A10045 | A10045 Threshold channel CH-10, catchpit CP-10 and connections |  | 3d | 2027-08-13 | 2027-08-16 | 158 | 39d | 26d | Plumber gang |
| 277 | 10.3.A10050 | A10050 Septic tank ST-01 — excavation, construction and testing |  | 8d | 2027-07-31 | 2027-08-09 | 20, 183 | 33d | 0d | Mason gang; Concrete gang |
| 278 | 10.3.A10055 | A10055 Soak pits SK-01 and SK-02 — constructed after the percolation test |  | 6d | 2027-08-10 | 2027-08-16 | 277 | 33d | 0d | Mason gang; Unskilled gang |
| 279 | 10.3.A10060 | A10060 External drainage connections and chambers |  | 6d | 2027-08-17 | 2027-08-23 | 278 | 33d | 20d | Plumber gang; Mason gang |
| 280 | 10.3.A10065 | A10065 MILESTONE: drainage installed | milestone | 0d | 2027-09-16 | 2027-09-16 | 279, 276, 274, 270, 272, 275 | 13d | 0d |  |
| 281 | 11 | **ELECTRICAL AND EMP WORKS** |  | 147d | 2027-03-15 | 2027-09-02 |  |  |  |  |
| 282 | 11.1 | **Concealed containment and earthing** |  | 135d | 2027-03-15 | 2027-08-19 |  |  |  |  |
| 283 | 11.1.A11015 | A11015 Earth pits, earth electrodes and the buried earth ring |  | 5d | 2027-03-15 | 2027-03-19 | 82 | 157d | 124d | Electrician gang; Unskilled gang |
| 284 | 11.1.A11020 | A11020 EMP straps and bonding at every construction joint |  | 8d | 2027-04-09 | 2027-04-17 | 93SS | 138d | 130d | Welding set; Electrician gang |
| 285 | 11.1.A11050 | A11050 Earthing conductors, bonding and connection to the electrode system |  | 6d | 2027-08-13 | 2027-08-19 | 283, 290 | 33d | 0d | Electrician gang |
| 286 | 11.2 | **EMP Zone 2 enclosure and penetration protection** |  | 12d | 2027-07-23 | 2027-08-05 |  |  |  |  |
| 287 | 11.2.A11025 | A11025 Main cable route, service entry plate and EMP penetration protection |  | 6d | 2027-07-23 | 2027-07-29 | 128 | 12d | 0d | Electrician gang; Welding set |
| 288 | 11.2.A11030 | A11030 EMP Zone 2 shielded enclosure erection in bay 3 — SPECIALIST |  | 12d | 2027-07-23 | 2027-08-05 | 35, 128 | 45d | 23d | Specialist subcontractor; Crane |

Notes:
- 267: spine falls 1:400 east to the sump
- 269: duty, standby AND manual
- 270: four devices in series; all inside the envelope
- 272: NEVER connected to the clean sump
- 275: trapped gully to an external soakaway
- 277: IS 2470 (Part 1) Table 1
- 278: SK-01 is 2.3 % short of its own requirement — conflict C19, UNRESOLVED
- 279: several lengths NOT DETERMINABLE — no site plan
- 280: M-14
- 283: IS 3043; 5 ohm target
- 284: welded Cu/galv strap at every joint — a joint is an EMP discontinuity
- 287: power PCI, waveguide below cutoff, fibre — MIL-STD-188-125-1
- 288: the rebar cage gives 0 dB at 1 GHz; the welded steel room is the answer

| ID | WBS | Task | Type | Duration | Start | Finish | Predecessors | Total slack | Free slack | Resources |
| --- | --- | --- | --- | --- | --- | --- | --- | --- | --- | --- |
| 289 | 11.3 | **Distribution, lighting and power** |  | 30d | 2027-07-30 | 2027-09-02 |  |  |  |  |
| 290 | 11.3.A11035 | A11035 Distribution board, sub-mains and final circuit wiring |  | 12d | 2027-07-30 | 2027-08-12 | 287 | 12d | 0d | Electrician gang |
| 291 | 11.3.A11040 | A11040 Lighting, small power and emergency lighting installation |  | 10d | 2027-08-13 | 2027-08-24 | 290 | 12d | 5d | Electrician gang |
| 292 | 11.3.A11045 | A11045 Generator connection, changeover panel and protection |  | 5d | 2027-08-13 | 2027-08-18 | 262, 290 | 34d | 0d | Electrician gang |
| 293 | 11.3.A11055 | A11055 Power to pumps, fans, filter trains and controls |  | 6d | 2027-08-26 | 2027-09-01 | 290, 263 | 17d | 0d | Electrician gang |
| 294 | 11.3.A11060 | A11060 MILESTONE: electrical installation complete | milestone | 0d | 2027-09-02 | 2027-09-02 | 291, 292, 285, 293, 288 | 22d | 0d |  |
| 295 | 12 | **INTERNAL FINISHES** |  | 47d | 2027-07-27 | 2027-09-18 |  |  |  |  |
| 296 | 12.1 | **Substrate preparation and wet-area tanking** |  | 11d | 2027-07-27 | 2027-08-07 |  |  |  |  |
| 297 | 12.1.A12010 | A12010 Substrate preparation — hack, make good, prepare soffits and walls |  | 6d | 2027-07-27 | 2027-08-02 | 128, 133 | 7d | 0d | Unskilled gang; Plasterer gang |
| 298 | 12.1.A12015 | A12015 Internal wet-area tanking WP-04 — bays 2, 5 and 6 |  | 5d | 2027-08-03 | 2027-08-07 | 297 | 7d | 0d | Waterproofing gang |
| 299 | 12.2 | **Floor finishes and skirtings** |  | 35d | 2027-08-09 | 2027-09-17 |  |  |  |  |
| 300 | 12.2.A12020 | A12020 Floor screeds laid to falls, bays 1–8 |  | 8d | 2027-08-09 | 2027-08-17 | 268, 298 | 7d | 0d | Mason gang; Concrete gang |
| 301 | 12.2.A12025 | A12025 Floor finish F-01 — sealed power-floated, bays 1, 3 and 4 |  | 6d | 2027-08-18 | 2027-08-24 | 300 | 7d | 0d | Mason gang |
| 302 | 12.2.A12030 | A12030 Floor finish F-02 — seamless coved wet-area, bays 2, 5 and 6 |  | 5d | 2027-08-18 | 2027-08-23 | 300 | 8d | 1d | Mason gang |
| 303 | 12.2.A12035 | A12035 Floor finish F-03 — non-slip, stair shaft, treads and landings |  | 4d | 2027-08-18 | 2027-08-21 | 300 | 43d | 0d | Mason gang |
| 304 | 12.2.A12040 | A12040 Floor finish F-04 — oil-resistant with a bunded plinth, bay 8 |  | 3d | 2027-08-18 | 2027-08-20 | 300 | 77d | 24d | Mason gang |
| 305 | 12.2.A12045 | A12045 Floor finish F-05 headhouse and F-06 covered entry stairwell |  | 4d | 2027-09-14 | 2027-09-17 | 147, 157 | 53d | 0d | Mason gang |
| 306 | 12.2.A12050 | A12050 Coved skirtings S-01 / S-02, integral with the floor |  | 5d | 2027-08-25 | 2027-08-30 | 301, 302 | 7d | 0d | Mason gang |
| 307 | 12.3 | **Wall and soffit finishes** |  | 16d | 2027-08-31 | 2027-09-17 |  |  |  |  |
| 308 | 12.3.A12055 | A12055 Wall finishes W-01 / W-02 / W-03 — sealed washable coatings |  | 10d | 2027-08-31 | 2027-09-10 | 306, 291 | 7d | 0d | Painter gang |
| 309 | 12.3.A12060 | A12060 Soffit finishes C-01 / C-02 — exposed RC, sealed |  | 6d | 2027-09-11 | 2027-09-17 | 308 | 7d | 0d | Painter gang |
| 310 | 12.4 | **Internal doors** |  | 7d | 2027-09-11 | 2027-09-18 |  |  |  |  |
| 311 | 12.4.A12065 | A12065 Internal doors D-04 in the W8 partitions; gas-tight door D-05 in W5 |  | 4d | 2027-09-11 | 2027-09-15 | 308 | 55d | 2d | Unskilled gang |
| 312 | 12.4.A12070 | A12070 MILESTONE: internal finishes complete | milestone | 0d | 2027-09-18 | 2027-09-18 | 309, 311, 305, 303, 304 | 53d |  |  |

Notes:
- 290: IS 732
- 294: M-15
- 298: turned up 150 and dressed to every gully and sleeve
- 301: decontaminable, joint-free within a room
- 302: NO tiles, NO grout — grout lines fail decontamination
- 306: no separate section, no sealant joint
- 308: applied direct to concrete; no cavity, no lining
- 309: no suspended ceiling and no boxing-in anywhere
- 311: D-05 is UNRESOLVED — no door is scheduled in W5 anywhere in the project
- 312: M-16

| ID | WBS | Task | Type | Duration | Start | Finish | Predecessors | Total slack | Free slack | Resources |
| --- | --- | --- | --- | --- | --- | --- | --- | --- | --- | --- |
| 313 | 13 | **EXTERNAL WORKS, CONCEALMENT AND RESTORATION** |  | 32d | 2027-09-10 | 2027-10-18 |  |  |  |  |
| 314 | 13.1 | **Berm, regrading and surface water** |  | 18d | 2027-09-10 | 2027-09-30 |  |  |  |  |
| 315 | 13.1.A13010 | A13010 Berm forming and grading 1.5:1 to +0.900 against the headhouse and stairwell |  | 8d | 2027-09-10 | 2027-09-18 | 197, 157 | 0d |  | Excavator; Dozer/grader; Vibratory roller |
| 316 | 13.1.A13015 | A13015 Site regrading — crown and falls 1:50 away from the structure |  | 5d | 2027-09-20 | 2027-09-24 | 315 | 0d |  | Dozer/grader; Vibratory roller |
| 317 | 13.1.A13020 | A13020 Surface water drainage, cut-off drains and outfalls |  | 5d | 2027-09-25 | 2027-09-30 | 316 | 7d |  | Plumber gang; Unskilled gang |
| 318 | 13.2 | **Access and hardstanding** |  | 12d | 2027-09-25 | 2027-10-09 |  |  |  |  |
| 319 | 13.2.A13025 | A13025 Access route, hardstanding and turning area |  | 8d | 2027-09-25 | 2027-10-05 | 316 | 0d |  | Dozer/grader; Vibratory roller; Unskilled gang |
| 320 | 13.2.A13030 | A13030 Sentry post surround, apron and drainage |  | 4d | 2027-10-06 | 2027-10-09 | 244, 319 | 0d |  | Mason gang; Unskilled gang |
| 321 | 13.3 | **Concealment and camouflage** |  | 12d | 2027-09-25 | 2027-10-09 |  |  |  |  |
| 322 | 13.3.A13035 | A13035 Turfing and planting over the cover — the concealment layer |  | 6d | 2027-09-25 | 2027-10-01 | 316 | 0d |  | Unskilled gang |
| 323 | 13.3.A13040 | A13040 Camouflage and concealment — spoil dressing, track discipline, screening |  | 6d | 2027-10-04 | 2027-10-09 | 322 | 0d |  | Unskilled gang |
| 324 | 13.4 | **Site restoration** |  | 7d | 2027-10-11 | 2027-10-18 |  |  |  |  |
| 325 | 13.4.A13045 | A13045 Removal of temporary works, site restoration and clearing |  | 6d | 2027-10-11 | 2027-10-16 | 323, 320, 317 | 0d |  | Excavator; Unskilled gang |
| 326 | 13.4.A13050 | A13050 MILESTONE: external works and concealment complete | milestone | 0d | 2027-10-18 | 2027-10-18 | 325 | 0d |  |  |
| 327 | 14 | **TESTING, COMMISSIONING AND HANDOVER** |  | 92d | 2027-08-05 | 2027-11-20 |  |  |  |  |
| 328 | 14.1 | **Structural verification** |  | 28d | 2027-08-23 | 2027-09-23 |  |  |  |  |
| 329 | 14.1.A14010 | A14010 Concrete cube results at 28 days, all pours — review and acceptance |  | 5d | 2027-08-23 | 2027-08-27 | 193 | 38d | 0d | QA/QC Engineer |
| 330 | 14.1.A14015 | A14015 Non-destructive testing — ultrasonic pulse velocity and rebound hammer |  | 4d | 2027-08-28 | 2027-09-01 | 329 | 38d |  | QA/QC Engineer |
| 331 | 14.1.A14020 | A14020 Dimensional and as-built survey of the completed structure |  | 5d | 2027-09-10 | 2027-09-15 | 197 | 26d |  | Surveyor |
| 332 | 14.1.A14025 | A14025 Watertightness inspection of the completed envelope |  | 5d | 2027-09-18 | 2027-09-23 | 297, 197, 179 | 19d |  | QA/QC Engineer; Waterproofing gang |
| 333 | 14.2 | **Services testing** |  | 28d | 2027-08-20 | 2027-09-21 |  |  |  |  |
| 334 | 14.2.A14030 | A14030 Drainage testing — pipes, gullies, chambers, pump duty and standby |  | 5d | 2027-09-16 | 2027-09-21 | 280 | 13d | 6d | Plumber gang; QA/QC Engineer |
| 335 | 14.2.A14035 | A14035 Electrical testing — insulation, continuity, polarity, protection |  | 5d | 2027-09-02 | 2027-09-07 | 294 | 33d |  | Electrician gang; QA/QC Engineer |
| 336 | 14.2.A14040 | A14040 Earth resistance measurement — 5 ohm target |  | 2d | 2027-08-20 | 2027-08-21 | 285 | 47d |  | Electrician gang; QA/QC Engineer |

Notes:
- 315: volume NOT DETERMINABLE — no site plan exists
- 319: extent not defined in the project
- 322: the only concealment element the project confirms
- 323: no concealment specification exists — scope to be confirmed
- 326: M-17
- 329: IS 516
- 330: IS 13311 (Parts 1 and 2)
- 335: IS 732
- 336: IEEE 142 / IS 3043

| ID | WBS | Task | Type | Duration | Start | Finish | Predecessors | Total slack | Free slack | Resources |
| --- | --- | --- | --- | --- | --- | --- | --- | --- | --- | --- |
| 337 | 14.3 | **Protective-system testing** |  | 47d | 2027-08-05 | 2027-09-28 |  |  |  |  |
| 338 | 14.3.A14045 | A14045 EMP shielding effectiveness survey — 80 dB, 10 kHz to 1 GHz |  | 8d | 2027-09-18 | 2027-09-27 | 288, 294, 309, 284 | 8d | 1d | Specialist subcontractor; QA/QC Engineer |
| 339 | 14.3.A14050 | A14050 Blast doors 1 and 2 — functional and seal testing |  | 4d | 2027-09-18 | 2027-09-22 | 165, 309 | 7d | 0d | Specialist subcontractor; Site Engineer (Civil) |
| 340 | 14.3.A14055 | A14055 Escape shaft access and closure functional test |  | 2d | 2027-08-05 | 2027-08-06 | 162 | 60d |  | Site Engineer (Civil); Safety Officer |
| 341 | 14.3.A14065 | A14065 Gas-tightness and overpressure test of the envelope, bays 1–6 |  | 5d | 2027-09-23 | 2027-09-28 | 343, 339 | 7d | 0d | Specialist subcontractor; QA/QC Engineer |
| 342 | 14.4 | **Commissioning** |  | 41d | 2027-08-19 | 2027-10-06 |  |  |  |  |
| 343 | 14.4.A14060 | A14060 HVAC and CBRN filter train commissioning — airflow and overpressure |  | 8d | 2027-09-02 | 2027-09-10 | 264, 293 | 17d | 10d | Specialist subcontractor; HVAC fitter |
| 344 | 14.4.A14070 | A14070 Generator load test and changeover proving |  | 3d | 2027-08-19 | 2027-08-21 | 292 | 39d | 32d | Electrician gang; Specialist subcontractor |
| 345 | 14.4.A14075 | A14075 Integrated systems commissioning — protective mode operation |  | 6d | 2027-09-29 | 2027-10-06 | 341, 343, 344, 334, 338 | 7d | 0d | Site Engineer (Services); Specialist subcontractor |
| 346 | 14.5 | **Completion and handover** |  | 39d | 2027-10-07 | 2027-11-20 |  |  |  |  |
| 347 | 14.5.A14080 | A14080 Snagging inspection and defects list |  | 5d | 2027-10-18 | 2027-10-22 | 345, 326, 246, 332, 330, 335, 336, 340, 331, 131, 166, 167 | 0d |  | QA/QC Engineer; Project Manager |
| 348 | 14.5.A14085 | A14085 Rectification of defects |  | 10d | 2027-10-23 | 2027-11-03 | 347 | 0d |  | Unskilled gang; Mason gang; Painter gang |
| 349 | 14.5.A14090 | A14090 As-built drawings, O&M manuals and test certificates |  | 12d | 2027-10-07 | 2027-10-20 | 345 | 7d | 0d | Project Manager; Planning Engineer |
| 350 | 14.5.A14095 | A14095 Operator training — CBRN plant, pumps, generator, doors, escape shafts |  | 5d | 2027-10-21 | 2027-10-26 | 349 | 7d |  | Specialist subcontractor; Site Engineer (Services) |
| 351 | 14.5.A14098 | A14098 Programme contingency — festival holidays and weather allowance |  | 10d | 2027-11-04 | 2027-11-15 | 348, 350 | 0d |  |  |
| 352 | 14.5.A14100 | A14100 Final inspection and handover documentation |  | 4d | 2027-11-16 | 2027-11-19 | 351 | 0d |  | Project Manager; QA/QC Engineer |
| 353 | 14.5.A14105 | A14105 MILESTONE: PRACTICAL COMPLETION AND HANDOVER | milestone | 0d | 2027-11-20 | 2027-11-20 | 352 | 0d |  |  |

Notes:
- 338: IEEE Std 299; MIL-STD-188-125-1
- 341: 67.8 m2 floor, 217.0 m3 volume
- 351: the calendar carries no festival holidays; this activity absorbs them
- 353: M-18
