# UG CBRN HDRND OPS ROOM MCS - R0

Schedule from MS Project, 2026-11-02 to 2027-07-26.

## Calendars

- UG CBRN OPS PROJ CAL R0: Mon-Sat 09:00-13:00, 14:00-18:00; Sun off. Exceptions (off unless hours are given): 2024-01-26 to 2029-01-26 (Republic Day, recurring), 2024-05-01 to 2029-05-01 (Labour Day, recurring), 2024-08-15 to 2029-08-15 (Independence Day, recurring), 2024-09-17 to 2029-09-17 (Vishwakarma Jayanti, recurring), 2024-10-02 to 2029-10-02 (Gandhi Jayanti, recurring), 2026-11-07 to 2026-11-08 (Diwali 2026), 2027-03-10 (Ramzan Eid 2027), 2027-05-17 (Bakri Eid 2027).

## Schedule

| ID | WBS | Task | Duration | Start | Finish | Predecessors | Total slack |
| --- | --- | --- | --- | --- | --- | --- | --- |
| 1 | 1 | **UNDERGROUND CBRN - HARDENED OPS ROOM (21.6 x 6.8) - MASTER CONSTRUCTION SCHEDULE (R0)** | 224d | 2026-11-02 | 2027-07-26 |  | 0d |
| 2 | 1.1 | **Initial Works** | 4d | 2026-11-02 | 2026-11-05 |  | 0d |
| 3 | 1.1.1 | Site Cleaning, Plants, Shrubs removal | 4d | 2026-11-02 | 2026-11-05 |  | 0d |
| 4 | 1.1.2 | Water Provision | 3d | 2026-11-02 | 2026-11-04 | 3SS | 221d |
| 5 | 1.1.3 | Electricity Provision | 3d | 2026-11-02 | 2026-11-04 | 3SS | 221d |
| 6 | 1.2 | **Substructure Works** | 40d | 2026-11-02 | 2026-12-18 |  | 0d |
| 7 | 1.2.1 | Setting Out Works & Architect Checking | 2d | 2026-11-02 | 2026-11-03 | 3SS | 0d |
| 8 | 1.2.2 | Mass Excavation Till Buried Room Bottom Foundation Strata | 4d | 2026-11-04 | 2026-11-09 | 7 | 0d |
| 9 | 1.2.3 | Dressing, Surface Levelling | 2d | 2026-11-10 | 2026-11-11 | 8 | 0d |
| 10 | 1.2.4 | Anti Termite Treatment | 2d | 2026-11-12 | 2026-11-13 | 9 | 0d |
| 11 | 1.2.5 | **Center Line Works** | 4d | 2026-11-14 | 2026-11-18 |  | 0d |
| 12 | 1.2.5.1 | Bottom PCC for Monolithic Mat Raft | 2d | 2026-11-14 | 2026-11-16 | 10 | 0d |
| 13 | 1.2.5.2 | Center Line Coordinates Marking with Checking | 2d | 2026-11-17 | 2026-11-18 | 12 | 0d |
| 14 | 1.2.6 | **Monolithic Mat Raft, 600mm Thk Periphery Shear Wall RCC Works** | 20d | 2026-11-19 | 2026-12-11 |  | 0d |
| 15 | 1.2.6.1 | Monolithic Mat Raft, 600mm Thk Periphery Shear Wall Reinforcement | 3d | 2026-11-19 | 2026-11-21 | 13 | 0d |
| 16 | 1.2.6.2 | Structural Consultant Checking | 1d | 2026-11-23 | 2026-11-23 | 15 | 0d |
| 17 | 1.2.6.3 | Monolithic Mat Raft Shuttering | 3d | 2026-11-24 | 2026-11-26 | 16 | 0d |
| 18 | 1.2.6.4 | Monolithic Mat Raft Casting | 3d | 2026-11-25 | 2026-11-27 | 17FS-2d | 0d |
| 19 | 1.2.6.5 | Monolithic Mat Raft Deshuttering, Cleaning etc | 3d | 2026-11-26 | 2026-11-28 | 18FS-2d | 0d |
| 20 | 1.2.6.6 | 600mm Thk Periphery Shear Wall Starter Works | 2d | 2026-11-30 | 2026-12-01 | 19 | 0d |
| 21 | 1.2.6.7 | 600mm Thk Periphery Shear Wall Reinforcement till -3.2Mtrs | 4d | 2026-12-01 | 2026-12-04 | 20FS-1d | 0d |
| 22 | 1.2.6.8 | 600mm Thk Periphery Shear Wall Shuttering till -3.2Mtrs | 4d | 2026-12-03 | 2026-12-07 | 21SS+2d | 0d |
| 23 | 1.2.6.9 | 600mm Thk Periphery Shear Wall Casting till -3.2Mtrs | 2d | 2026-12-08 | 2026-12-09 | 22 | 0d |
| 24 | 1.2.6.10 | 600mm Thk Periphery Shear Wall Deshuttering till -3.2Mtrs | 2d | 2026-12-10 | 2026-12-11 | 23 | 0d |
| 25 | 1.2.7 | Waterproofing - Monolithic Mat Raft, Periphery Shear Wall (till -3.2Mtrs Height) | 3d | 2026-12-12 | 2026-12-15 | 24 | 0d |
| 26 | 1.2.8 | Side Backfilling & Compaction- Monolithic Mat Raft, Periphery Shear Wall (till -3.2Mtrs Height) | 3d | 2026-12-16 | 2026-12-18 | 25 | 0d |

| ID | WBS | Task | Duration | Start | Finish | Predecessors | Total slack |
| --- | --- | --- | --- | --- | --- | --- | --- |
| 27 | 1.3 | **Superstructure RCC Works & Brick Works** | 82d | 2026-12-19 | 2027-03-26 |  | 0d |
| 28 | 1.3.1 | **1st Slab (1000 mm Thk) RCC Works (DECN Room, Gen Room Roof Lvl)** | 25d | 2026-12-19 | 2027-01-16 |  | 0d |
| 29 | 1.3.1.1 | **1st Slab Shear Wall RCC Works** | 9d | 2026-12-19 | 2026-12-29 |  | 0d |
| 30 | 1.3.1.1.1 | Shear Wall Reinforcement | 3d | 2026-12-19 | 2026-12-22 | 26 | 0d |
| 31 | 1.3.1.1.2 | Electrical, Plumbing Services (Concealed) | 2d | 2026-12-23 | 2026-12-24 | 30 | 0d |
| 32 | 1.3.1.1.3 | Shear Wall Shuttering | 3d | 2026-12-24 | 2026-12-26 | 31FS-1d | 0d |
| 33 | 1.3.1.1.4 | Shear Wall Casting | 3d | 2026-12-25 | 2026-12-28 | 32FS-2d | 0d |
| 34 | 1.3.1.1.5 | Shear Wall Deshuttering | 2d | 2026-12-28 | 2026-12-29 | 33FS-1d | 0d |
| 35 | 1.3.1.2 | **1st Slab Beam & Slab RCC Works** | 16d | 2026-12-30 | 2027-01-16 |  | 0d |
| 36 | 1.3.1.2.1 | Beam Bottom Works | 5d | 2026-12-30 | 2027-01-04 | 34 | 0d |
| 37 | 1.3.1.2.2 | Beam Reinforcement Works | 4d | 2027-01-01 | 2027-01-05 | 36FS-3d | 0d |
| 38 | 1.3.1.2.3 | Beam Side & Slab Shuttering Works | 4d | 2027-01-04 | 2027-01-07 | 37FS-2d | 0d |
| 39 | 1.3.1.2.4 | 1000mm Thk Slab Reinforcement Works | 6d | 2027-01-06 | 2027-01-12 | 38FS-2d | 0d |
| 40 | 1.3.1.2.5 | Structural Consultant Checking | 1d | 2027-01-13 | 2027-01-13 | 39 | 0d |
| 41 | 1.3.1.2.6 | Slab Casting - 1st Slab (1000 mm Thk) RCC Works (DECN Room, Gen Room Roof Lvl) | 3d | 2027-01-14 | 2027-01-16 | 40 | 0d |
| 42 | 1.3.2 | **2nd Slab (Ground Lvl) - Grade Slab RCC Works** | 23d | 2027-01-18 | 2027-02-13 |  | 0d |
| 43 | 1.3.2.1 | **Shear Wall RCC Works** | 19d | 2027-01-18 | 2027-02-09 |  | 0d |
| 44 | 1.3.2.1.1 | Shear Wall Reinforcement (Periphery & Partition Wall) | 4d | 2027-01-18 | 2027-01-21 | 41 | 0d |
| 45 | 1.3.2.1.2 | Electrical, Plumbing Services (Concealed) | 2d | 2027-01-22 | 2027-01-23 | 44 | 0d |
| 46 | 1.3.2.1.3 | Telescopic Steel Ladder Embedment | 2d | 2027-01-25 | 2027-01-27 | 44FF+1d, 45 | 0d |
| 47 | 1.3.2.1.4 | Shear Wall Shuttering | 4d | 2027-01-25 | 2027-01-29 | 46FS-2d | 0d |
| 48 | 1.3.2.1.5 | Shear Wall Casting | 3d | 2027-01-28 | 2027-01-30 | 47FS-2d | 0d |
| 49 | 1.3.2.1.6 | Shear Wall Deshuttering | 2d | 2027-01-30 | 2027-02-01 | 48FS-1d | 0d |
| 50 | 1.3.2.1.7 | Waterproofing | 4d | 2027-02-01 | 2027-02-04 | 49FS-1d | 0d |
| 51 | 1.3.2.1.8 | Layerwise Backifilling & Compaction in 4m Soil Overbudon | 4d | 2027-02-05 | 2027-02-09 | 50 | 0d |

| ID | WBS | Task | Duration | Start | Finish | Predecessors | Total slack | Free slack |
| --- | --- | --- | --- | --- | --- | --- | --- | --- |
| 52 | 1.3.2.2 | **4m Soil Overburdon Grade Slab RCC Works** | 4d | 2027-02-10 | 2027-02-13 |  | 0d |  |
| 53 | 1.3.2.2.1 | Grade Slab Reinforcement Works | 2d | 2027-02-10 | 2027-02-11 | 51 | 0d |  |
| 54 | 1.3.2.2.2 | Slab Casting - Grade Slab (2nd Slab) | 2d | 2027-02-12 | 2027-02-13 | 53 | 0d |  |
| 55 | 1.3.3 | **3rd Slab (First Floor Slab) RCC Works** | 10d | 2027-02-15 | 2027-02-25 |  | 0d |  |
| 56 | 1.3.3.1 | **Column RCC Works** | 4d | 2027-02-15 | 2027-02-18 |  | 0d |  |
| 57 | 1.3.3.1.1 | Column, Staircase & Lift Shear Wall Reinforcement | 1d | 2027-02-15 | 2027-02-15 | 54 | 0d |  |
| 58 | 1.3.3.1.2 | Column, Staircase & Lift Shear Wall Shuttering | 1d | 2027-02-16 | 2027-02-16 | 57 | 0d |  |
| 59 | 1.3.3.1.3 | Column, Staircase & Lift Shear Wall Casting | 1d | 2027-02-17 | 2027-02-17 | 58 | 0d |  |
| 60 | 1.3.3.1.4 | Column, Staircase & Lift Shear Wall Deshuttering | 1d | 2027-02-18 | 2027-02-18 | 59 | 0d |  |
| 61 | 1.3.3.2 | **Beam & Slab RCC Works** | 6d | 2027-02-19 | 2027-02-25 |  | 0d |  |
| 62 | 1.3.3.2.1 | Beam Bottom Works | 1d | 2027-02-19 | 2027-02-19 | 60 | 0d |  |
| 63 | 1.3.3.2.2 | Beam Reinforcement Works | 2d | 2027-02-19 | 2027-02-20 | 62FS-1d | 0d |  |
| 64 | 1.3.3.2.3 | Beam Side & Slab Shuttering Works | 2d | 2027-02-20 | 2027-02-22 | 63FS-1d | 0d |  |
| 65 | 1.3.3.2.4 | Slab Reinforcement Works | 2d | 2027-02-22 | 2027-02-23 | 64FS-1d | 0d |  |
| 66 | 1.3.3.2.5 | Structural Consultant Checking | 1d | 2027-02-24 | 2027-02-24 | 65 | 0d |  |
| 67 | 1.3.3.2.6 | Slab Casting - 3rd Slab (First Floor Slab) | 1d | 2027-02-25 | 2027-02-25 | 66 | 0d |  |
| 68 | 1.3.4 | **4th Slab (Headhouse Roof Slab) RCC Works** | 10d | 2027-02-26 | 2027-03-09 |  | 102d |  |
| 69 | 1.3.4.1 | **Column RCC Works** | 4d | 2027-02-26 | 2027-03-02 |  | 102d |  |
| 70 | 1.3.4.1.1 | Column, Staircase & Lift Shear Wall Reinforcement | 1d | 2027-02-26 | 2027-02-26 | 67 | 102d | 0d |
| 71 | 1.3.4.1.2 | Column, Staircase & Lift Shear Wall Shuttering | 1d | 2027-02-27 | 2027-02-27 | 70 | 102d | 0d |
| 72 | 1.3.4.1.3 | Column, Staircase & Lift Shear Wall Casting | 1d | 2027-03-01 | 2027-03-01 | 71 | 102d | 0d |
| 73 | 1.3.4.1.4 | Column, Staircase & Lift Shear Wall Deshuttering | 1d | 2027-03-02 | 2027-03-02 | 72 | 102d | 0d |
| 74 | 1.3.4.2 | **Beam & Slab RCC Works** | 6d | 2027-03-03 | 2027-03-09 |  | 102d |  |
| 75 | 1.3.4.2.1 | Beam Bottom Works | 1d | 2027-03-03 | 2027-03-03 | 73 | 102d | 0d |
| 76 | 1.3.4.2.2 | Beam Reinforcement Works | 2d | 2027-03-03 | 2027-03-04 | 75FS-1d | 102d | 0d |
| 77 | 1.3.4.2.3 | Beam Side & Slab Shuttering Works | 2d | 2027-03-04 | 2027-03-05 | 76FS-1d | 102d | 0d |
| 78 | 1.3.4.2.4 | Slab Reinforcement Works | 2d | 2027-03-05 | 2027-03-06 | 77FS-1d | 102d | 0d |
| 79 | 1.3.4.2.5 | Structural Consultant Checking | 1d | 2027-03-08 | 2027-03-08 | 78 | 102d | 0d |
| 80 | 1.3.4.2.6 | Slab Casting - 4th Slab (Headhouse Roof Slab) | 1d | 2027-03-09 | 2027-03-09 | 79 | 102d | 0d |

| ID | WBS | Task | Duration | Start | Finish | Predecessors | Total slack | Free slack |
| --- | --- | --- | --- | --- | --- | --- | --- | --- |
| 81 | 1.3.5 | **RCC Slab Deshuttering,Cleaning & Housekeeping Works** | 32d | 2027-02-17 | 2027-03-26 |  | 18d |  |
| 82 | 1.3.5.1 | 1st Slab Deshuttering,Cleaning & Housekeeping, Hacking Works | 7d | 2027-02-17 | 2027-02-24 | 41FS+25d | 127d |  |
| 83 | 1.3.5.2 | 2nd Slab Deshuttering,Cleaning & Housekeeping, Hacking Works | 4d | 2027-02-26 | 2027-03-02 | 54FS+10d | 122d |  |
| 84 | 1.3.5.3 | 3rd Slab Deshuttering,Cleaning & Housekeeping, Hacking Works | 4d | 2027-03-11 | 2027-03-15 | 67FS+10d | 0d |  |
| 85 | 1.3.5.4 | 4th Slab Deshuttering,Cleaning & Housekeeping, Hacking Works | 4d | 2027-03-23 | 2027-03-26 | 80FS+10d | 102d |  |
| 86 | 1.4 | **Finishing Works** | 112d | 2027-03-16 | 2027-07-26 |  | 0d |  |
| 87 | 1.4.1 | **Brickworks** | 12d | 2027-03-16 | 2027-03-29 |  | 0d |  |
| 88 | 1.4.1.1 | Command Ctr, Decn Room, Gen Room Floor Brickwork | 4d | 2027-03-16 | 2027-03-19 | 84 | 0d |  |
| 89 | 1.4.1.2 | Ground Floor Brickwork | 4d | 2027-03-20 | 2027-03-24 | 88 | 0d |  |
| 90 | 1.4.1.3 | First Floor Brickwork | 4d | 2027-03-25 | 2027-03-29 | 89 | 0d |  |
| 91 | 1.4.2 | Spiral Staricase Installation | 6d | 2027-03-30 | 2027-04-05 | 90 | 0d |  |
| 92 | 1.4.3 | **Internal Sand Faced Plaster** | 18d | 2027-03-20 | 2027-04-09 |  | 0d |  |
| 93 | 1.4.3.1 | Command Ctr, Decn Room, Gen Room Floor Int. Sand faced Plaster | 4d | 2027-03-20 | 2027-03-24 | 88 | 6d | 0d |
| 94 | 1.4.3.2 | Ground Floor Int. Sand faced Plaster | 4d | 2027-03-25 | 2027-03-29 | 89, 93 | 6d |  |
| 95 | 1.4.3.3 | First Floor Int. Sand faced Plaster | 4d | 2027-04-06 | 2027-04-09 | 90, 94, 91 | 0d |  |
| 96 | 1.4.4 | Internal Plumbing Work & Drainage Works | 3d | 2027-04-10 | 2027-04-13 | 95 | 0d |  |
| 97 | 1.4.5 | Internal Water Proofing Works | 4d | 2027-04-14 | 2027-04-17 | 96 | 0d |  |
| 98 | 1.4.6 | Dado Works (Wall Tiles) - Internal Walls | 6d | 2027-04-22 | 2027-04-28 | 97FS+3d | 0d |  |
| 99 | 1.4.7 | **External Plaster - Scaffold Erection, Thiyya, 1st & 2nd Coat Plaster** | 8d | 2027-04-29 | 2027-05-08 |  | 0d |  |
| 100 | 1.4.7.1 | North Side External Plaster | 2d | 2027-04-29 | 2027-04-30 | 98 | 0d |  |
| 101 | 1.4.7.2 | East Side External Plaster | 2d | 2027-05-03 | 2027-05-04 | 100 | 0d |  |
| 102 | 1.4.7.3 | South Side External Plaster | 2d | 2027-05-05 | 2027-05-06 | 101 | 0d |  |
| 103 | 1.4.7.4 | West Side External Plaster | 2d | 2027-05-07 | 2027-05-08 | 102 | 0d |  |
| 104 | 1.4.8 | External Plumbing Works (with Scaffolding) - Vertica Pipes, Chambers etc. | 3d | 2027-05-10 | 2027-05-12 | 103 | 63d |  |

| ID | WBS | Task | Type | Duration | Start | Finish | Predecessors | Total slack |
| --- | --- | --- | --- | --- | --- | --- | --- | --- |
| 105 | 1.4.9 | **Internal Gypsum Punning Works (Ceiling & Walls) - Rooms & Common Area** |  | 8d | 2027-05-10 | 2027-05-19 |  | 0d |
| 106 | 1.4.9.1 | Ground Floor - Int Gypsum Punning Works |  | 4d | 2027-05-10 | 2027-05-13 | 103 | 0d |
| 107 | 1.4.9.2 | 1st Floor - Int Gypsum Punning Works |  | 4d | 2027-05-14 | 2027-05-19 | 106 | 0d |
| 108 | 1.4.10 | **Vision Pannels, Window Works** |  | 8d | 2027-05-20 | 2027-05-28 |  | 0d |
| 109 | 1.4.10.1 | Frame Installation Works |  | 4d | 2027-05-20 | 2027-05-24 | 107 | 0d |
| 110 | 1.4.10.2 | Shutter Installation Works |  | 4d | 2027-05-25 | 2027-05-28 | 109 | 0d |
| 111 | 1.4.11 | Flooring & Skirting Works |  | 6d | 2027-05-29 | 2027-06-04 | 110 | 0d |
| 112 | 1.4.12 | **Door Works** |  | 8d | 2027-06-05 | 2027-06-14 |  | 0d |
| 113 | 1.4.12.1 | Frame Installation Works |  | 4d | 2027-06-05 | 2027-06-09 | 111 | 0d |
| 114 | 1.4.12.2 | Shutter Installation Works |  | 4d | 2027-06-08 | 2027-06-11 | 113FS-2d | 0d |
| 115 | 1.4.12.3 | Door Hardware Fitting Works |  | 4d | 2027-06-10 | 2027-06-14 | 114FS-2d | 0d |
| 116 | 1.4.13 | Final Gypsum Work - Skirting Touch Up, Window Door Dhar Kor,Butt Finish etc. |  | 2d | 2027-06-15 | 2027-06-16 | 115 | 0d |
| 117 | 1.4.14 | Internal Painting |  | 4d | 2027-06-17 | 2027-06-21 | 116 | 0d |
| 118 | 1.4.15 | **External Painting Works (with Scaffolding)** |  | 12d | 2027-06-22 | 2027-07-05 |  | 0d |
| 119 | 1.4.15.1 | Crack Seal Application |  | 2d | 2027-06-22 | 2027-06-23 | 117 | 0d |
| 120 | 1.4.15.2 | Primer Coat |  | 3d | 2027-06-24 | 2027-06-26 | 119 | 0d |
| 121 | 1.4.15.3 | 1st Coat Paint |  | 3d | 2027-06-28 | 2027-06-30 | 120 | 0d |
| 122 | 1.4.15.4 | 2nd Coat Paint |  | 4d | 2027-07-01 | 2027-07-05 | 121 | 0d |
| 123 | 1.4.16 | Electrical Wiring Works - Mains wire Pulling, Mater Panel Fixing etc. (DB to Meter Panel) |  | 6d | 2027-06-15 | 2027-06-21 | 115 | 12d |
| 124 | 1.4.17 | CP & Sanitary Fittings |  | 3d | 2027-07-06 | 2027-07-08 | 122, 123 | 0d |
| 125 | 1.4.18 | **Internal Paint Final (2nd) Coat** |  | 6d | 2027-07-09 | 2027-07-15 |  | 0d |
| 126 | 1.4.18.1 | Ground Floor Internal Paint Final (2nd) Coat |  | 3d | 2027-07-09 | 2027-07-12 | 124 | 0d |
| 127 | 1.4.18.2 | 1st Floor Internal Paint Final (2nd) Coat |  | 3d | 2027-07-13 | 2027-07-15 | 126 | 0d |
| 128 | 1.4.19 | Miscelleneous Works |  | 5d | 2027-07-16 | 2027-07-21 | 127 | 0d |
| 129 | 1.4.20 | Testing & Comminissioning (All Services) |  | 4d | 2027-07-22 | 2027-07-26 | 128 | 0d |
| 130 | 1.4.21 | Hand-Over | milestone | 0d | 2027-07-26 | 2027-07-26 | 129 | 0d |
